# WBS Teresa martin mejoras

How a schedule from MS Project changed from version to version. A marks actual dates.

## Version 1 (saved 2015-06-20)

Note of the change: Re ordenamiento de repositorio

| ID | WBS | Task | Duration | Start | Finish | Predecessors | Total float | Constraint |
| --- | --- | --- | --- | --- | --- | --- | --- | --- |
| 1 |  | Teresa Martin | 95d? | 2015-04-06 | 2015-08-14 |  | 0d | finish no earlier than 2015-08-14 |
| 2 | 2 | **1- Análisis** | 13d | 2015-04-07 | 2015-04-23 |  |  |  |
| 3 |  | 1.1-Carta de iniciación del proyecto. | 1d | 2015-04-07 | 2015-04-07 |  | 12d |  |
| 4 | 2.2 | **1.2-Elicitacion** | 4d | 2015-04-07 | 2015-04-10 |  |  |  |
| 5 |  | 1.2.1- Evaluar proveedores de req. a entrevistar | 1d | 2015-04-07 | 2015-04-07 |  | 0d |  |
| 6 |  | 1.2.2- Definicion de estrategia de recoleccion de req. | 1d | 2015-04-08 | 2015-04-08 | 5 | 0d | finish no earlier than 2015-04-08 |
| 7 |  | 1.2.3- Planificar reuniones de elicitación de req. | 1d | 2015-04-09 | 2015-04-09 | 6 | 0d |  |
| 8 |  | 1.2.4- Identificar procesos del sistema. | 1d | 2015-04-10 | 2015-04-10 | 7 | 0d |  |
| 9 |  | 1.3- Minuta de reunión de arranque. | 1d | 2015-04-10 | 2015-04-10 | 7 | 0d | start no earlier than 2015-04-10 |
| 10 | 2.4 | **1.4- Planeación de proyecto.** | 4d | 2015-04-13 | 2015-04-16 | 4 |  |  |
| 11 |  | 1.4.1- Descripción de la problemática. | 1d | 2015-04-13 | 2015-04-13 | 9 | 3d |  |
| 12 |  | 1.4.3- Organigrama. | 1d | 2015-04-13 | 2015-04-13 | 9 | 3d |  |
| 13 |  | 1.4.4- Alcance. | 1d | 2015-04-13 | 2015-04-13 | 9 | 0d |  |
| 14 |  | 1.4.5- Elementos clave para su planeación, monitoreo y control. | 1d | 2015-04-14 | 2015-04-14 | 13 | 2d |  |
| 15 |  | 1.4.6- Perfiles de los participantes y del administrador. | 1d | 2015-04-14 | 2015-04-14 | 13 | 0d |  |
| 16 | 2.4.6 | **1.4.7- Diagrama de Gantt(Wbs).** | 1d | 2015-04-15 | 2015-04-15 | 15 | 0d |  |
| 17 |  | 1.4.7.1- Matriz de responsabilidades. | 1d | 2015-04-15 | 2015-04-15 | 15 | 1d |  |
| 18 |  | 1.4.7.2- Diagrama de la ruta critica. | 1d | 2015-04-15 | 2015-04-15 | 15 | 0d |  |
| 19 |  | 1.4.8- Lista de factores clave de desempeño. | 1d | 2015-04-16 | 2015-04-16 | 18 | 5d |  |
| 20 |  | 1.4.9- Matriz de comunicación y justificación. | 1d | 2015-04-16 | 2015-04-16 | 18 | 0d |  |
| 21 | 2.7 | **1.5- Definición de estandar de calidad.** | 3d | 2015-04-17 | 2015-04-21 | 10 | 0d |  |
| 22 |  | 1.5.1- Gestión del alcance. | 1d | 2015-04-17 | 2015-04-17 | 20 | 0d |  |
| 23 |  | 1.5.2- Gestión del tiempo. | 1d | 2015-04-20 | 2015-04-20 | 22 | 0d |  |
| 24 |  | 1.5.3- Gestión de costos. | 1d | 2015-04-21 | 2015-04-21 | 23 | 0d |  |
| 25 |  | 1.5.4- Gestión de calidad. | 1d | 2015-04-21 | 2015-04-21 | 23 | 0d |  |
| 26 | 2.8 | **1.6- Definicion de ciclo de vida.** | 1d | 2015-04-22 | 2015-04-22 | 21 | 0d |  |
| 27 |  | 1.6.1- Justificación de los procesos. | 1d | 2015-04-22 | 2015-04-22 | 25 | 0d |  |
| 28 | 2.9 | **1.7- Script(plantilla) del proceso de admón.** | 1d | 2015-04-23 | 2015-04-23 |  | 0d |  |
| 29 |  | 1.7.1- Políticas. | 1d | 2015-04-23 | 2015-04-23 | 27 | 0d |  |
| 30 |  | 1.8- Mercado meta. | 1d | 2015-04-23 | 2015-04-23 | 27 | 0d |  |
| 31 |  | 1.9- Justificar el patrón de diseño a utilizar. | 1d | 2015-04-23 | 2015-04-23 | 27 | 0d |  |
| 32 |  | 1.10- Identificar los req. funcionales. | 1d | 2015-04-23 | 2015-04-23 | 27 | 0d |  |
| 33 |  | 1.11- Identificar los req. no funcionales. | 1d | 2015-04-23 | 2015-04-23 | 27 | 0d |  |
| 34 | 3 | **2- Diseño** | 7d | 2015-04-24 | 2015-05-04 | 2 | 0d |  |
| 35 |  | 2.1- Estructura del Proyecto. | 1d | 2015-04-24 | 2015-04-24 | 33 | 8d |  |
| 36 |  | 2.2-Diagrama de actividades. | 1d | 2015-04-24 | 2015-04-24 | 33 | 8d |  |
| 37 |  | 2.3- Diagramas de casos de uso. | 1d | 2015-04-24 | 2015-04-24 | 33 | 0d |  |
| 38 |  | 2.4- Diagramas de secuencia. | 1d | 2015-04-27 | 2015-04-27 | 37 | 7d |  |
| 39 |  | 2.5- Diagra de clases. | 2d | 2015-04-27 | 2015-04-28 | 37 | 0d |  |
| 40 |  | 2.6- Diagrama de rol. | 1d | 2015-04-29 | 2015-04-29 | 39 | 5d |  |
| 41 |  | 2.7-Diagrama de interación. | 1d | 2015-04-29 | 2015-04-29 | 39 | 5d |  |
| 42 |  | 2.8-Diagrama de componentes. | 1d | 2015-04-29 | 2015-04-29 | 39 | 5d |  |
| 43 |  | 2.9- Diagrama despliegue. | 1d | 2015-04-29 | 2015-04-29 | 39 | 0d |  |
| 44 | 3.10 | **2.10- Base de datos.** | 2d | 2015-04-30 | 2015-05-01 | 43 | 0d |  |
| 45 |  | 2.10.1- Diagrama entidad relación. | 1d | 2015-04-30 | 2015-04-30 | 43 | 0d |  |
| 46 |  | 2.10.2-Diagrama relacional. | 1d | 2015-05-01 | 2015-05-01 | 45 | 0d |  |
| 47 |  | 2.11- Maquetación. | 1d | 2015-05-04 | 2015-05-04 | 46 | 0d |  |
| 48 |  | 2.12- Mapa de naveción. | 1d | 2015-05-04 | 2015-05-04 | 46 | 0d |  |
| 49 | 4 | **3- Codificación** | 29d | 2015-05-05 | 2015-06-12 | 34 | 0d |  |
| 50 |  | 3.1-Creación de la DB. | 1d | 2015-05-05 | 2015-05-05 | 34 | 30d |  |
| 51 |  | 3.2-Conexión a DB. | 1d | 2015-05-05 | 2015-05-05 | 34 | 0d |  |
| 52 | 4.3 | **3.3- Módulo alumnos** | 10d | 2015-05-06 | 2015-05-19 | 51 | 0d |  |
| 53 |  | 3.3.1-Interfaz. | 2d | 2015-05-06 | 2015-05-07 | 51 | 0d |  |
| 54 |  | 3.3.3-Alta de alumno. | 2d | 2015-05-08 | 2015-05-11 | 53 | 0d |  |
| 55 |  | 3.3.4-Baja de alumno. | 2d | 2015-05-12 | 2015-05-13 | 54 | 0d |  |
| 56 |  | 3.3.5-Actualización de alumno. | 2d | 2015-05-14 | 2015-05-15 | 55 | 0d |  |
| 57 |  | 3.3.6- Consultar alumnos. | 2d | 2015-05-18 | 2015-05-19 | 56 | 0d |  |
| 58 | 4.4 | **3.4-Módulo pagos** | 2d | 2015-05-20 | 2015-05-21 | 52 | 0d |  |
| 59 |  | 3.4.1- interfaz. | 1d | 2015-05-20 | 2015-05-20 | 57 | 3d |  |
| 60 |  | 3.4.2- Pago de colegiaturas. | 1d | 2015-05-20 | 2015-05-20 | 57 | 0d |  |
| 61 |  | 3.4.3- Editar pago. | 1d | 2015-05-21 | 2015-05-21 | 60 | 0d |  |
| 62 |  | 3.4.4- Eliminar pago. | 1d | 2015-05-21 | 2015-05-21 | 60 | 0d |  |
| 63 |  | 3.4.5- Consultar pago. | 1d | 2015-05-21 | 2015-05-21 | 60 | 0d |  |
| 64 | 4.5 | **3.5- Módulo becas** | 5d | 2015-05-22 | 2015-05-28 | 58 | 0d |  |
| 65 |  | 3.5.1- Interfaz. | 1d | 2015-05-22 | 2015-05-22 | 58 | 6d |  |
| 66 |  | 3.5.2- Asignar beca. | 2d | 2015-05-22 | 2015-05-25 | 58 | 0d |  |
| 67 |  | 3.5.3- Editar beca. | 2d | 2015-05-26 | 2015-05-27 | 66 | 0d |  |
| 68 |  | 3.5.4- Eliminar beca. | 1d | 2015-05-28 | 2015-05-28 | 67 | 0d |  |
| 69 |  | 3.5.6- Consultar beca. | 1d | 2015-05-28 | 2015-05-28 | 67 | 0d |  |
| 70 | 4.6 | **3.6- Módulo Reportes** | 8d | 2015-05-29 | 2015-06-09 | 64 | 0d |  |

| ID | WBS | Task | Duration | Start | Finish | Predecessors | Total float |
| --- | --- | --- | --- | --- | --- | --- | --- |
| 71 |  | 3.6.1- Interfaz. | 1d | 2015-05-29 | 2015-05-29 | 69 | 10d |
| 72 |  | 3.6.2- Consultar pagos. | 2d | 2015-05-29 | 2015-06-01 | 69 | 0d |
| 73 |  | 3.6.3- Consultar alumnos. | 2d | 2015-06-02 | 2015-06-03 | 72 | 0d |
| 74 |  | 3.6.4- Colsultar becas. | 2d | 2015-06-04 | 2015-06-05 | 73 | 0d |
| 75 |  | 3.6.5- Consultar ciclos. | 2d | 2015-06-08 | 2015-06-09 | 74 | 0d |
| 76 | 4.7 | **3.7- Módulo Ciclos** | 3d | 2015-06-10 | 2015-06-12 | 70 | 0d |
| 77 |  | 3.7.1- Interfaz. | 1d | 2015-06-10 | 2015-06-10 | 75 | 4d |
| 78 |  | 3.7.2- Asignar ciclo. | 2d | 2015-06-10 | 2015-06-11 | 75 | 0d |
| 79 |  | 3.7.3- Editar ciclo. | 1d | 2015-06-12 | 2015-06-12 | 78 | 0d |
| 80 |  | 3.7.4- Eliminar ciclo. | 1d | 2015-06-12 | 2015-06-12 | 78 | 0d |
| 81 |  | 3.7.5- Consultar ciclo. | 1d | 2015-06-12 | 2015-06-12 | 78 | 0d |
| 82 | 5 | **4.-Pruebas** | 2d | 2015-06-15 | 2015-06-16 | 49 | 0d |
| 83 |  | 4.1-Pruebas unitarias. | 1d | 2015-06-15 | 2015-06-15 | 81 | 44d |
| 84 |  | 4.2-Pruebas de integración. | 1d | 2015-06-15 | 2015-06-15 | 81 | 0d |
| 85 |  | 4.3-Pruebas de rendimiento. | 1d | 2015-06-16 | 2015-06-16 | 84 | 43d |
| 86 |  | 4.4-Pruebas del sistema. | 1d | 2015-06-16 | 2015-06-16 | 84 | 0d |
| 87 |  | 5.- Entrega Versión 0.1 | 1d | 2015-06-17 | 2015-06-17 | 86 | 0d |
| 88 | 7 | **1- Análisis versión 0.1** | 2d | 2015-06-18 | 2015-06-19 | 87 | 0d |
| 89 |  | 1.1- Identificar procesos del sistema. | 1d | 2015-06-18 | 2015-06-18 | 87 | 3d |
| 90 |  | 1.2- Minuta de reunión. | 1d | 2015-06-18 | 2015-06-18 | 87 | 0d |
| 91 |  | 1.3- Identificar los req. funcionales. | 1d | 2015-06-19 | 2015-06-19 | 90 | 0d |
| 92 |  | 1.4- Identificar los req. no funcionales. | 1d | 2015-06-19 | 2015-06-19 | 90 | 0d |
| 93 | 8 | **2- Diseño versión 0.1** | 4d | 2015-06-22 | 2015-06-25 | 88 | 0d |
| 94 |  | 2.1- Diagrama de rol. | 1d | 2015-06-22 | 2015-06-22 | 92 | 3d |
| 95 |  | 2.2-Diagrama de interación. | 1d | 2015-06-22 | 2015-06-22 | 92 | 3d |
| 96 |  | 2.3- Diagrama de componentes. | 1d | 2015-06-22 | 2015-06-22 | 92 | 0d |
| 97 |  | 2.4- Diagrama despliegue. | 1d | 2015-06-23 | 2015-06-23 | 96 | 0d |
| 98 |  | 2.5- Maquetación. | 1d | 2015-06-24 | 2015-06-24 | 97 | 0d |
| 99 |  | 2.6- Mapa de naveción. | 1d | 2015-06-25 | 2015-06-25 | 98 | 0d |
| 100 | 9 | **3- Codificación versión 0.1** | 15d | 2015-06-26 | 2015-07-16 | 93 | 0d |
| 101 | 9.1 | **3.1-Corrección en alguno de los módulos.** | 15d | 2015-06-26 | 2015-07-16 | 99 | 0d |
| 102 |  | 3.1.1- Módulo alumnos versión0.1. | 3d | 2015-06-26 | 2015-06-30 | 99 | 0d |
| 103 |  | 3.1.2- Módulo pagos versión0.1. | 3d | 2015-07-01 | 2015-07-03 | 102 | 0d |
| 104 |  | 3.1.3- Módulo becas versión0.1. | 3d | 2015-07-06 | 2015-07-08 | 103 | 0d |
| 105 |  | 3.1.4- Módulo reportes versión0.1. | 4d | 2015-07-09 | 2015-07-14 | 104 | 0d |
| 106 |  | 3.1.5- Módulo ciclos versión0.1. | 2d | 2015-07-15 | 2015-07-16 | 105 | 0d |
| 107 | 10 | **4.-Pruebas versión 0.1** | 7d | 2015-07-17 | 2015-07-27 | 100 | 0d |
| 108 |  | 4.1-Pruebas unitarias versión0.1. | 2d | 2015-07-17 | 2015-07-20 | 106 | 0d |
| 109 |  | 4.2-Pruebas de integración versión0.1. | 1d | 2015-07-21 | 2015-07-21 | 108 | 0d |
| 110 |  | 4.3-Pruebas de rendimiento versión0.1. | 2d | 2015-07-22 | 2015-07-23 | 109 | 0d |
| 111 |  | 4.4-Pruebas del sistema versión0.1. | 2d | 2015-07-24 | 2015-07-27 | 110 | 0d |
| 112 |  | 5.- Entrega versión 0.2 | 1d | 2015-07-28 | 2015-07-28 | 107 | 0d |
| 113 | 12 | **1- Análisis versió 0.2** | 1d | 2015-07-29 | 2015-07-29 | 112 | 0d |
| 114 |  | 1.1- Minuta de reunión versión0.2. | 1d | 2015-07-29 | 2015-07-29 | 112 | 0d |
| 115 | 13 | **2- Diseño version 0.2** | 1d | 2015-07-30 | 2015-07-30 | 113 | 0d |
| 116 |  | 2.1- Maquetación versión0.2. | 1d | 2015-07-30 | 2015-07-30 | 114 | 0d |
| 117 |  | 2.2- Mapa de naveción versión0.2. | 1d | 2015-07-30 | 2015-07-30 | 114 | 0d |
| 118 | 14 | **3- Codificación versión0.2** | 1d | 2015-07-31 | 2015-07-31 | 115 | 0d |
| 119 |  | 3.1- Aceptación de los módulos. | 1d | 2015-07-31 | 2015-07-31 | 117 | 0d |
| 120 | 15 | **4.-Pruebas versión 0.2** | 4d | 2015-08-03 | 2015-08-06 | 118 | 0d |
| 121 |  | 4.1- Pruebas de rendimiento versión0.2. | 2d | 2015-08-03 | 2015-08-04 | 119 | 0d |
| 122 |  | 4.2- Pruebas del sistema 0.2. | 2d | 2015-08-05 | 2015-08-06 | 121 | 0d |
| 123 | 16 | **5.-Implementación** | 2d | 2015-08-07 | 2015-08-10 | 120 | 0d |
| 124 |  | 5.1-Elección del Hosting. | 1d | 2015-08-07 | 2015-08-07 | 122 | 0d |
| 125 |  | 5.2-Copiar los archivos fuente. | 1d | 2015-08-10 | 2015-08-10 | 124 | 0d |
| 126 | 17 | **6.-Cierre del Proyecto.** | 3d | 2015-08-11 | 2015-08-13 | 123 | 0d |
| 127 |  | 6.1-Carta de Aceptación. | 1d | 2015-08-11 | 2015-08-11 | 125 | 3d |
| 128 |  | 6.2-Acta de cierrede proyectos. | 1d | 2015-08-11 | 2015-08-11 | 125 | 0d |
| 129 |  | 6.3-Evaluación de desempeño. | 1d | 2015-08-12 | 2015-08-12 | 128 | 2d |
| 130 |  | 6.4-Liberación de recursos. | 1d | 2015-08-12 | 2015-08-12 | 128 | 2d |
| 131 |  | 6.5-Lecciones aprendidas. | 1d | 2015-08-12 | 2015-08-12 | 128 | 0d |
| 132 |  | 6.6-Informe final(cierre). | 1d | 2015-08-13 | 2015-08-13 | 131 | 0d |
| 133 |  | 7.- Entrega final versión 0.3 | 1d | 2015-08-14 | 2015-08-14 | 132, 126 | 0d |

## Version 2 (saved 2015-06-26)

Note of the change: Actualizacion

Last finish stays 2015-08-14.

Changed:

| ID | Task | Start | Finish | Duration | Total float | Predecessors | Other |
| --- | --- | --- | --- | --- | --- | --- | --- |
| 1 | Teresa Martin | 2015-04-06 → 2015-04-27 09:00 (+21d) | 2015-08-14 → 2015-08-14 19:00 | 95d? → 80d? |  |  | constraint finish no earlier than 2015-08-14 → start no earlier than 2015-04-27 09:00 |
| 2 | **1- Análisis** | 2015-04-07 → 2015-04-27 09:00 (+20d) | 2015-04-23 → 2015-05-06 19:00 (+13d) | 13d → 8d |  |  |  |
| 3 | 1.1-Carta de iniciación del proyecto. | 2015-04-07 → 2015-04-27 09:00 (+20d) | 2015-04-07 → 2015-04-27 11:00 (+20d) | 1d → 2h | 12d → 42d |  | resources none → Lider |
| 4 | **1.2-Elicitacion** | 2015-04-07 → 2015-04-27 09:00 (+20d) | 2015-04-10 → 2015-04-28 17:00 (+18d) | 4d → 1.75d | none → 35.12d |  |  |
| 5 | 1.2.1- Evaluar proveedores de req. a entrevistar | 2015-04-07 → 2015-04-27 09:00 (+20d) | 2015-04-07 → 2015-04-27 13:00 (+20d) | 1d → 4h | 0d → 35.25d |  | resources none → Lider |
| 6 | 1.2.2- Definicion de estrategia de recoleccion de req. | 2015-04-08 → 2015-04-27 15:00 (+19d) | 2015-04-08 → 2015-04-27 19:00 (+19d) | 1d → 4h | 0d → 35.12d |  | constraint finish no earlier than 2015-04-08 → start no earlier than 2015-04-07 09:00; resources none → Analista |
| 7 | 1.2.3- Planificar reuniones de elicitación de req. | 2015-04-09 → 2015-04-28 09:00 (+19d) | 2015-04-09 → 2015-04-28 12:00 (+19d) | 1d → 3h | 0d → 35.12d |  | resources none → Analista |
| 8 | 1.2.4- Identificar procesos del sistema. | 2015-04-10 → 2015-04-28 12:00 (+18d) | 2015-04-10 → 2015-04-28 17:00 (+18d) | 1d → 3h | 0d → 35.25d |  | constraint none → start no earlier than 2015-04-08 09:00; resources none → Analista |
| 9 | 1.3- Minuta de reunión de arranque. | 2015-04-10 → 2015-04-28 17:00 (+18d) | 2015-04-10 → 2015-04-28 19:00 (+18d) | 1d → 2h | 0d → 35.25d | 7 → 8 | constraint start no earlier than 2015-04-10 → start no earlier than 2015-04-08 09:00; resources none → Lider |
| 10 | **1.4- Planeación de proyecto.** | 2015-04-13 → 2015-04-29 09:00 (+16d) | 2015-04-16 → 2015-04-30 19:00 (+14d) | 4d → 2d | none → 35.12d |  |  |
| 11 | 1.4.1- Descripción de la problemática. | 2015-04-13 → 2015-04-29 09:00 (+16d) | 2015-04-13 → 2015-04-29 10:00 (+16d) | 1d → 1h | 3d → 35.12d |  | resources none → Analista |
| 12 | 1.4.2- Organigrama. | 2015-04-13 → 2015-04-29 10:00 (+16d) | 2015-04-13 → 2015-04-29 11:00 (+16d) | 1d → 1h | 3d → 35.25d | 9 → 11 | was named 1.4.3- Organigrama.; resources none → Lider |
| 13 | 1.4.3- Alcance. | 2015-04-13 → 2015-04-29 11:00 (+16d) | 2015-04-13 → 2015-04-29 12:00 (+16d) | 1d → 1h | 0d → 35.25d | 9 → 12 | was named 1.4.4- Alcance.; resources none → Lider |
| 14 | 1.4.4- Elementos clave para su planeación, monitoreo y control. | 2015-04-14 → 2015-04-29 12:00 (+15d) | 2015-04-14 → 2015-04-29 16:00 (+15d) | 1d → 2h | 2d → 35.25d |  | was named 1.4.5- Elementos clave para su planeación, monitoreo y control.; resources none → Lider |
| 15 | 1.4.5- Perfiles de los participantes y del administrador. | 2015-04-14 → 2015-04-29 16:00 (+15d) | 2015-04-14 → 2015-04-29 19:00 (+15d) | 1d → 3h | 0d → 35.25d | 13 → 14 | was named 1.4.6- Perfiles de los participantes y del administrador.; resources none → Lider |
| 16 | **1.4.6- Diagrama de Gantt(Wbs).** | 2015-04-15 → 2015-04-30 09:00 (+15d) | 2015-04-15 → 2015-04-30 19:00 (+15d) |  | 0d → 35.12d |  | was named 1.4.7- Diagrama de Gantt(Wbs). |
| 17 | 1.4.6.1- Matriz de responsabilidades. | 2015-04-15 → 2015-04-30 09:00 (+15d) | 2015-04-15 → 2015-04-30 13:00 (+15d) | 1d → 4h | 1d → 35.12d |  | was named 1.4.7.1- Matriz de responsabilidades.; resources none → Lider |
| 18 | 1.4.6.2- Diagrama de la ruta critica. | 2015-04-15 → 2015-04-30 15:00 (+15d) | 2015-04-15 → 2015-04-30 19:00 (+15d) | 1d → 4h | 0d → 35.12d | 15 → 17 | was named 1.4.7.2- Diagrama de la ruta critica.; resources none → Lider |
| 19 | 1.4.7- Lista de factores clave de desempeño. | 2015-04-16 → 2015-05-01 09:00 (+15d) | 2015-04-16 → 2015-05-01 12:00 (+15d) | 1d → 3h | 5d → 35.12d |  | was named 1.4.8- Lista de factores clave de desempeño.; resources none → Lider |
| 20 | 1.4.8- Matriz de comunicación y justificación. | 2015-04-16 → 2015-05-01 12:00 (+15d) | 2015-04-16 → 2015-05-01 17:00 (+15d) | 1d → 3h | 0d → 35.25d | 18 → 19 | was named 1.4.9- Matriz de comunicación y justificación.; resources none → Lider |
| 21 | **1.5- Definición de estandar de calidad.** | 2015-04-17 → 2015-05-01 17:00 (+14d) | 2015-04-21 → 2015-05-04 17:00 (+13d) | 3d → 1d | 0d → 35.12d |  |  |
| 22 | 1.5.1- Gestión del alcance. | 2015-04-17 → 2015-05-01 17:00 (+14d) | 2015-04-17 → 2015-05-01 19:00 (+14d) | 1d → 2h | 0d → 35.25d |  | constraint none → start no earlier than 2015-04-14 09:00; resources none → Lider |
| 23 | 1.5.2- Gestión del tiempo. | 2015-04-20 → 2015-05-04 09:00 (+14d) | 2015-04-20 → 2015-05-04 11:00 (+14d) | 1d → 2h | 0d → 35.12d |  | resources none → Lider |
| 24 | 1.5.3- Gestión de costos. | 2015-04-21 → 2015-05-04 11:00 (+13d) | 2015-04-21 → 2015-05-04 13:00 (+13d) | 1d → 2h | 0d → 35.25d |  | resources none → Lider |
| 25 | 1.5.4- Gestión de calidad. | 2015-04-21 → 2015-05-04 15:00 (+13d) | 2015-04-21 → 2015-05-04 17:00 (+13d) | 1d → 2h | 0d → 35.12d | 23 → 24 | resources none → Lider |
| 26 | **1.6- Definicion de ciclo de vida.** | 2015-04-22 → 2015-05-04 17:00 (+12d) | 2015-04-22 → 2015-05-04 19:00 (+12d) | 1d → 0.25d | 0d → 35.12d |  |  |
| 27 | 1.6.1- Justificación de los procesos. | 2015-04-22 → 2015-05-04 17:00 (+12d) | 2015-04-22 → 2015-05-04 19:00 (+12d) | 1d → 2h | 0d → 35.25d |  | resources none → Analista |
| 28 | **1.7- Script(plantilla) del proceso de admón.** | 2015-04-23 → 2015-05-05 09:00 (+12d) | 2015-04-23 → 2015-05-05 19:00 (+12d) |  | 0d → 35.25d | none → 26 |  |
| 29 | 1.7.1- Políticas. | 2015-04-23 → 2015-05-05 09:00 (+12d) | 2015-04-23 → 2015-05-05 19:00 (+12d) |  | 0d → 35.25d |  |  |
| 30 | 1.8- Mercado meta. | 2015-04-23 → 2015-05-05 09:00 (+12d) | 2015-04-23 → 2015-05-05 11:00 (+12d) | 1d → 2h | 0d → 36d |  | resources none → Analista |
| 31 | 1.9- Justificar el patrón de diseño a utilizar. | 2015-04-23 → 2015-05-05 09:00 (+12d) | 2015-04-23 → 2015-05-05 11:00 (+12d) | 1d → 2h | 0d → 36d |  | resources none → Diseñador |
| 32 | 1.10- Identificar los req. funcionales. | 2015-04-23 → 2015-05-05 09:00 (+12d) | 2015-04-23 → 2015-05-05 12:00 (+12d) | 1d → 3h | 0d → 35.12d |  | resources none → Analista |
| 33 | 1.11- Identificar los req. no funcionales. | 2015-04-23 → 2015-05-05 12:00 (+12d) | 2015-04-23 → 2015-05-05 13:00 (+12d) | 1d → 1h | 0d → 35.75d | 27 → 32 | resources none → Analista |
| 34 | **2- Diseño** | 2015-04-24 → 2015-05-07 09:00 (+13d) | 2015-05-04 → 2015-05-13 18:00 (+9d) | 7d → 4.88d | 0d → 33.62d |  |  |
| 35 | 2.1- Estructura del Proyecto. | 2015-04-24 → 2015-05-07 09:00 (+13d) | 2015-04-24 → 2015-05-07 11:00 (+13d) | 1d → 2h | 8d → 33.62d |  | resources none → Analista |
| 36 | 2.2-Diagrama de actividades. | 2015-04-24 → 2015-05-07 11:00 (+13d) | 2015-04-24 → 2015-05-07 13:00 (+13d) | 1d → 2h | 8d → 34.25d | 33 → 35 | resources none → Analista |
| 37 | 2.3- Diagramas de casos de uso. | 2015-04-24 → 2015-05-07 15:00 (+13d) | 2015-04-24 → 2015-05-07 19:00 (+13d) | 1d → 4h | 0d → 33.62d | 33 → 36 | resources none → Analista |
| 38 | 2.4- Diagramas de secuencia. | 2015-04-27 → 2015-05-08 09:00 (+11d) | 2015-04-27 → 2015-05-08 12:00 (+11d) | 1d → 3h | 7d → 33.62d |  | constraint none → start no earlier than 2015-04-20 09:00; resources none → Analista |
| 39 | 2.5- Diagra de clases. | 2015-04-27 → 2015-05-08 12:00 (+11d) | 2015-04-28 → 2015-05-08 18:00 (+10d) | 2d → 4h | 0d → 34.25d | 37 → 38 | constraint none → start no earlier than 2015-04-20 09:00; resources none → Analista |
| 40 | 2.6- Diagrama de rol. | 2015-04-29 → 2015-05-08 18:00 (+9d) | 2015-04-29 → 2015-05-11 10:00 (+12d) | 1d → 2h | 5d → 34.25d |  | constraint none → start no earlier than 2015-04-21 09:00; resources none → Analista |
| 41 | 2.7-Diagrama de interación. | 2015-04-29 → 2015-05-11 10:00 (+12d) | 2015-04-29 → 2015-05-11 12:00 (+12d) | 1d → 2h | 5d → 34.25d | 39 → 40 | constraint none → start no earlier than 2015-04-21 09:00; resources none → Analista |
| 42 | 2.8-Diagrama de componentes. | 2015-04-29 → 2015-05-11 12:00 (+12d) | 2015-04-29 → 2015-05-11 16:00 (+12d) | 1d → 2h | 5d → 34.25d | 39 → 41 | constraint none → start no earlier than 2015-04-21 09:00; resources none → Analista |
| 43 | 2.9- Diagrama despliegue. | 2015-04-29 → 2015-05-11 16:00 (+12d) | 2015-04-29 → 2015-05-11 18:00 (+12d) | 1d → 2h | 0d → 34.25d | 39 → 42 | constraint none → start no earlier than 2015-04-21 09:00; resources none → Analista |
| 44 | **2.10- Base de datos.** | 2015-04-30 → 2015-05-11 18:00 (+11d) | 2015-05-01 → 2015-05-12 18:00 (+11d) | 2d → 1d | 0d → 33.62d |  |  |
| 45 | 2.10.1- Diagrama entidad relación. | 2015-04-30 → 2015-05-11 18:00 (+11d) | 2015-04-30 → 2015-05-12 12:00 (+12d) | 1d → 4h | 0d → 34.25d |  | resources none → Analista |
| 46 | 2.10.2-Diagrama relacional. | 2015-05-01 → 2015-05-12 12:00 (+11d) | 2015-05-01 → 2015-05-12 18:00 (+11d) | 1d → 4h | 0d → 34.25d |  | resources none → Analista |
| 47 | 2.11- Maquetación. | 2015-05-04 → 2015-05-12 18:00 (+8d) | 2015-05-04 → 2015-05-13 12:00 (+9d) | 1d → 4h | 0d → 34.25d |  | resources none → Diseñador |
| 48 | 2.12- Mapa de naveción. | 2015-05-04 → 2015-05-13 12:00 (+9d) | 2015-05-04 → 2015-05-13 18:00 (+9d) | 1d → 4h | 0d → 34.25d | 46 → 47 | resources none → Diseñador |
| 49 | **3- Codificación** | 2015-05-05 → 2015-05-13 18:00 (+8d) | 2015-06-12 → 2015-05-28 13:00 (-15d) | 29d → 10.62d | 0d → 33.62d |  |  |
| 50 | 3.1-Creación de la DB. | 2015-05-05 → 2015-05-13 18:00 (+8d) | 2015-05-05 → 2015-05-14 11:00 (+9d) | 1d → 3h | 30d → 34.25d |  | resources none → Programador |
| 51 | 3.2-Conexión a DB. | 2015-05-05 → 2015-05-14 11:00 (+9d) | 2015-05-05 → 2015-05-14 13:00 (+9d) | 1d → 2h | 0d → 34.25d | 34 → 50 | resources none → Programador |
| 52 | **3.3- Módulo alumnos** | 2015-05-06 → 2015-05-14 15:00 (+8d) | 2015-05-19 → 2015-05-20 13:00 (+1d) | 10d → 4d | 0d → 33.62d |  |  |
| 53 | 3.3.1-Interfaz. | 2015-05-06 → 2015-05-14 15:00 (+8d) | 2015-05-07 → 2015-05-18 13:00 (+11d) | 2d → 16h | 0d → 33.62d |  | constraint none → start no earlier than 2015-04-27 09:00; resources none → Diseñador |
| 54 | 3.3.3-Alta de alumno. | 2015-05-08 → 2015-05-18 15:00 (+10d) | 2015-05-11 → 2015-05-19 11:00 (+8d) | 2d → 6h | 0d → 33.62d |  | resources none → Programador |
| 55 | 3.3.4-Baja de alumno. | 2015-05-12 → 2015-05-19 11:00 (+7d) | 2015-05-13 → 2015-05-19 13:00 (+6d) | 2d → 2h | 0d → 34.25d |  | resources none → Programador |
| 56 | 3.3.5-Actualización de alumno. | 2015-05-14 → 2015-05-19 15:00 (+5d) | 2015-05-15 → 2015-05-20 10:00 (+5d) | 2d → 5h | 0d → 33.62d |  | constraint none → start no earlier than 2015-04-30 09:00; resources none → Programador |
| 57 | 3.3.6- Consultar alumnos. | 2015-05-18 → 2015-05-20 10:00 (+2d) | 2015-05-19 → 2015-05-20 13:00 (+1d) | 2d → 3h | 0d → 34.25d |  | constraint none → start no earlier than 2015-04-30 09:00; resources none → Programador |
| 58 | **3.4-Módulo pagos** | 2015-05-20 → 2015-05-20 15:00 | 2015-05-21 → 2015-05-22 11:00 (+1d) | 2d → 1.75d | 0d → 33.62d |  |  |
| 59 | 3.4.1- interfaz. | 2015-05-20 → 2015-05-20 15:00 | 2015-05-20 → 2015-05-20 19:00 | 1d → 4h | 3d → 33.62d |  | resources none → Diseñador |
| 60 | 3.4.2- Pago de colegiaturas. | 2015-05-20 → 2015-05-21 09:00 (+1d) | 2015-05-20 → 2015-05-21 13:00 (+1d) | 1d → 4h | 0d → 33.62d | 57 → 59 | resources none → Programador |
| 61 | 3.4.3- Editar pago. | 2015-05-21 → 2015-05-21 15:00 | 2015-05-21 → 2015-05-21 18:00 | 1d → 3h | 0d → 33.62d |  | resources none → Programador |
| 62 | 3.4.4- Eliminar pago. | 2015-05-21 → 2015-05-21 18:00 | 2015-05-21 → 2015-05-21 19:00 | 1d → 1h | 0d → 34.25d | 60 → 61 | resources none → Programador |
| 63 | 3.4.5- Consultar pago. | 2015-05-21 → 2015-05-22 09:00 (+1d) | 2015-05-21 → 2015-05-22 11:00 (+1d) | 1d → 2h | 0d → 33.62d | 60 → 62 | resources none → Programador |
| 64 | **3.5- Módulo becas** | 2015-05-22 → 2015-05-22 11:00 | 2015-05-28 → 2015-05-26 17:00 (-2d) | 5d → 2.5d | 0d → 33.62d | 58 → 63 |  |
| 65 | 3.5.1- Interfaz. | 2015-05-22 → 2015-05-22 11:00 | 2015-05-22 → 2015-05-25 13:00 (+3d) | 1d → 10h | 6d → 34.25d | 58 → 63 | constraint none → finish no earlier than 2015-05-05 19:00; resources none → Diseñador |
| 66 | 3.5.2- Asignar beca. | 2015-05-22 → 2015-05-25 15:00 (+3d) | 2015-05-25 → 2015-05-25 18:00 | 2d → 3h | 0d → 33.62d | 58 → 65 | resources none → Programador |
| 67 | 3.5.3- Editar beca. | 2015-05-26 → 2015-05-25 18:00 (-1d) | 2015-05-27 → 2015-05-26 11:00 (-1d) | 2d → 3h | 0d → 34.25d |  | constraint none → start no earlier than 2015-05-06 09:00; resources none → Programador |
| 68 | 3.5.4- Eliminar beca. | 2015-05-28 → 2015-05-26 11:00 (-2d) | 2015-05-28 → 2015-05-26 13:00 (-2d) | 1d → 2h | 0d → 34.25d |  | constraint none → start no earlier than 2015-05-07 09:00; resources none → Programador |
| 69 | 3.5.6- Consultar beca. | 2015-05-28 → 2015-05-26 15:00 (-2d) | 2015-05-28 → 2015-05-26 17:00 (-2d) | 1d → 2h | 0d → 33.62d | 67 → 68 | constraint none → start no earlier than 2015-05-07 09:00; resources none → Programador |
| 70 | **3.6- Módulo Reportes** | 2015-05-29 → 2015-05-26 17:00 (-3d) | 2015-06-09 → 2015-05-27 17:00 (-13d) | 8d → 1d | 0d → 33.62d |  |  |

| ID | Task | Start | Finish | Duration | Total float | Predecessors | Other |
| --- | --- | --- | --- | --- | --- | --- | --- |
| 71 | 3.6.1- Interfaz. | 2015-05-29 → 2015-05-26 17:00 (-3d) | 2015-05-29 → 2015-05-27 17:00 (-2d) | 1d → 8h | 10d → 34.25d | 69 → 64 | constraint none → finish no earlier than 2015-05-07 19:00; resources none → Diseñador |
| 72 | 3.6.2- Consultar pagos. | 2015-05-29 → 2015-05-26 17:00 (-3d) | 2015-06-01 → 2015-05-26 19:00 (-6d) | 2d → 2h | 0d → 34.25d |  | constraint none → start no earlier than 2015-05-08 09:00; resources none → Programador |
| 73 | 3.6.3- Consultar alumnos. | 2015-06-02 → 2015-05-27 09:00 (-6d) | 2015-06-03 → 2015-05-27 11:00 (-7d) | 2d → 2h | 0d → 33.62d |  | constraint none → start no earlier than 2015-05-08 09:00; resources none → Programador |
| 74 | 3.6.4- Colsultar becas. | 2015-06-04 → 2015-05-27 11:00 (-8d) | 2015-06-05 → 2015-05-27 13:00 (-9d) | 2d → 2h | 0d → 34.25d |  | constraint none → start no earlier than 2015-05-08 09:00; resources none → Programador |
| 75 | 3.6.5- Consultar ciclos. | 2015-06-08 → 2015-05-27 15:00 (-12d) | 2015-06-09 → 2015-05-27 17:00 (-13d) | 2d → 2h | 0d → 33.62d |  | constraint none → start no earlier than 2015-05-08 09:00; resources none → Programador |
| 76 | **3.7- Módulo Ciclos** | 2015-06-10 → 2015-05-27 17:00 (-14d) | 2015-06-12 → 2015-05-28 13:00 (-15d) | 3d → 0.75d | 0d → 33.62d |  |  |
| 77 | 3.7.1- Interfaz. | 2015-06-10 → 2015-05-27 17:00 (-14d) | 2015-06-10 → 2015-05-28 13:00 (-13d) | 1d → 6h | 4d → 34.25d |  | resources none → Diseñador |
| 78 | 3.7.2- Asignar ciclo. | 2015-06-10 → 2015-05-27 17:00 (-14d) | 2015-06-11 → 2015-05-27 19:00 (-15d) | 2d → 2h | 0d → 34.5d | 75 → none | constraint none → start no earlier than 2015-05-12 09:00; resources none → Programador |
| 79 | 3.7.3- Editar ciclo. | 2015-06-12 → 2015-05-28 09:00 (-15d) | 2015-06-12 → 2015-05-28 11:00 (-15d) | 1d → 2h | 0d → 34.5d |  | resources none → Programador |
| 80 | 3.7.4- Eliminar ciclo. | 2015-06-12 → 2015-05-28 09:00 (-15d) | 2015-06-12 → 2015-05-28 11:00 (-15d) | 1d → 2h | 0d → 34.5d |  | resources none → Programador |
| 81 | 3.7.5- Consultar ciclo. | 2015-06-12 → 2015-05-28 09:00 (-15d) | 2015-06-12 → 2015-05-28 11:00 (-15d) | 1d → 2h | 0d → 33.62d |  | resources none → Programador |
| 82 | **4.-Pruebas** | 2015-06-15 → 2015-05-28 15:00 (-18d) | 2015-06-16 → 2015-05-29 13:00 (-18d) | 2d → 1d | 0d → 33.38d |  |  |
| 83 | 4.1-Pruebas unitarias. | 2015-06-15 → 2015-05-28 15:00 (-18d) | 2015-06-15 → 2015-05-28 19:00 (-18d) | 1d → 4h | 44d → 33.88d |  | resources none → Tester |
| 84 | 4.2-Pruebas de integración. | 2015-06-15 → 2015-05-28 15:00 (-18d) | 2015-06-15 → 2015-05-28 19:00 (-18d) | 1d → 4h | 0d → 33.38d |  | resources none → Tester |
| 85 | 4.3-Pruebas de rendimiento. | 2015-06-16 → 2015-05-29 09:00 (-18d) | 2015-06-16 → 2015-05-29 13:00 (-18d) | 1d → 4h | 43d → 33.38d |  | resources none → Tester |
| 86 | 4.4-Pruebas del sistema. | 2015-06-16 → 2015-05-29 09:00 (-18d) | 2015-06-16 → 2015-05-29 13:00 (-18d) | 1d → 4h | 0d → 33.38d |  | resources none → Tester |
| 87 | 5.- Entrega Versión 0.1 | 2015-06-17 → 2015-05-29 15:00 (-19d) | 2015-06-17 → 2015-05-29 17:00 (-19d) | 1d → 2h | 0d → 33.38d | 86 → 82 | constraint none → start no earlier than 2015-05-14 09:00; resources none → Lider |
| 88 | **1- Análisis versión 0.1** | 2015-06-18 → 2015-05-29 17:00 (-20d) | 2015-06-19 → 2015-06-02 11:00 (-17d) | 2d → 1.5d | 0d → 33d |  |  |
| 89 | 1.1- Identificar procesos del sistema. | 2015-06-18 → 2015-05-29 17:00 (-20d) | 2015-06-18 → 2015-06-01 10:00 (-17d) | 1d → 3h | 3d → 34.25d |  | resources none → Lider |
| 90 | 1.2- Minuta de reunión. | 2015-06-18 → 2015-06-01 10:00 (-17d) | 2015-06-18 → 2015-06-01 12:00 (-17d) | 1d → 2h | 0d → 33.38d | 87 → 89 | resources none → Analista |
| 91 | 1.3- Identificar los req. funcionales. | 2015-06-19 → 2015-06-01 17:00 (-18d) | 2015-06-19 → 2015-06-01 19:00 (-18d) | 1d → 2h | 0d → 33d |  | constraint none → finish no earlier than 2015-06-01 19:00; resources none → Analista |
| 92 | 1.4- Identificar los req. no funcionales. | 2015-06-19 → 2015-06-02 09:00 (-17d) | 2015-06-19 → 2015-06-02 11:00 (-17d) | 1d → 2h | 0d → 33d | 90 → 91 | resources none → Analista |
| 93 | **2- Diseño versión 0.1** | 2015-06-22 → 2015-06-02 11:00 (-20d) | 2015-06-25 → 2015-06-03 12:00 (-22d) | 4d → 1.12d | 0d → 33d |  |  |
| 94 | 2.1- Diagrama de rol. | 2015-06-22 → 2015-06-02 11:00 (-20d) | 2015-06-22 → 2015-06-02 13:00 (-20d) | 1d → 2h | 3d → 33d |  | resources none → Analista |
| 95 | 2.2-Diagrama de interación. | 2015-06-22 → 2015-06-02 15:00 (-20d) | 2015-06-22 → 2015-06-02 17:00 (-20d) | 1d → 2h | 3d → 33d | 92 → 94 | resources none → Analista |
| 96 | 2.3- Diagrama de componentes. | 2015-06-22 → 2015-06-02 17:00 (-20d) | 2015-06-22 → 2015-06-02 19:00 (-20d) | 1d → 2h | 0d → 33d | 92 → 95 | constraint none → start no earlier than 2015-05-14 09:00; resources none → Analista |
| 97 | 2.4- Diagrama despliegue. | 2015-06-23 → 2015-06-03 09:00 (-20d) | 2015-06-23 → 2015-06-03 10:00 (-20d) | 1d → 1h | 0d → 33d |  | constraint none → start no earlier than 2015-05-14 09:00; resources none → Analista |
| 98 | 2.5- Maquetación. | 2015-06-24 → 2015-06-03 10:00 (-21d) | 2015-06-24 → 2015-06-03 11:00 (-21d) | 1d → 1h | 0d → 33d |  | resources none → Diseñador |
| 99 | 2.6- Mapa de naveción. | 2015-06-25 → 2015-06-03 11:00 (-22d) | 2015-06-25 → 2015-06-03 12:00 (-22d) | 1d → 1h | 0d → 33d |  | constraint none → start no earlier than 2015-05-14 09:00; resources none → Diseñador |
| 100 | **3- Codificación versión 0.1** | 2015-06-26 → 2015-06-03 12:00 (-23d) | 2015-07-16 → 2015-06-17 12:00 (-29d) | 15d → 10d | 0d → 33d |  |  |
| 101 | **3.1-Corrección en alguno de los módulos.** | 2015-06-26 → 2015-06-03 12:00 (-23d) | 2015-07-16 → 2015-06-17 12:00 (-29d) | 15d → 10d | 0d → 33d |  |  |
| 102 | 3.1.1- Módulo alumnos versión0.1. | 2015-06-26 → 2015-06-03 12:00 (-23d) | 2015-06-30 → 2015-06-05 12:00 (-25d) | 3d → 16h | 0d → 33d |  | resources none → Programador; Diseñador |
| 103 | 3.1.2- Módulo pagos versión0.1. | 2015-07-01 → 2015-06-05 12:00 (-26d) | 2015-07-03 → 2015-06-09 12:00 (-24d) | 3d → 16h | 0d → 33d |  | resources none → Programador; Diseñador |
| 104 | 3.1.3- Módulo becas versión0.1. | 2015-07-06 → 2015-06-09 12:00 (-27d) | 2015-07-08 → 2015-06-11 12:00 (-27d) | 3d → 16h | 0d → 33d |  | resources none → Programador; Diseñador |
| 105 | 3.1.4- Módulo reportes versión0.1. | 2015-07-09 → 2015-06-11 12:00 (-28d) | 2015-07-14 → 2015-06-15 12:00 (-29d) | 4d → 16h | 0d → 33d |  | resources none → Programador; Diseñador |
| 106 | 3.1.5- Módulo ciclos versión0.1. | 2015-07-15 → 2015-06-15 12:00 (-30d) | 2015-07-16 → 2015-06-17 12:00 (-29d) | 2d → 16h | 0d → 33d |  | resources none → Diseñador; Programador |
| 107 | **4.-Pruebas versión 0.1** | 2015-07-17 → 2015-06-17 12:00 (-30d) | 2015-07-27 → 2015-06-19 12:00 (-38d) | 7d → 2d | 0d → 33d |  |  |
| 108 | 4.1-Pruebas unitarias versión0.1. | 2015-07-17 → 2015-06-17 12:00 (-30d) | 2015-07-20 → 2015-06-17 18:00 (-33d) | 2d → 4h | 0d → 33d |  | resources none → Tester |
| 109 | 4.2-Pruebas de integración versión0.1. | 2015-07-21 → 2015-06-17 18:00 (-34d) | 2015-07-21 → 2015-06-18 12:00 (-33d) | 1d → 4h | 0d → 33d |  | resources none → Tester |
| 110 | 4.3-Pruebas de rendimiento versión0.1. | 2015-07-22 → 2015-06-18 12:00 (-34d) | 2015-07-23 → 2015-06-18 18:00 (-35d) | 2d → 4h | 0d → 33d |  | resources none → Tester |
| 111 | 4.4-Pruebas del sistema versión0.1. | 2015-07-24 → 2015-06-18 18:00 (-36d) | 2015-07-27 → 2015-06-19 12:00 (-38d) | 2d → 4h | 0d → 33d |  | resources none → Tester |
| 112 | 5.- Entrega versión 0.2 | 2015-07-28 → 2015-06-19 12:00 (-39d) | 2015-07-28 → 2015-06-19 17:00 (-39d) | 1d → 3h | 0d → 33d |  | resources none → Lider |
| 113 | **1- Análisis versió 0.2** | 2015-07-29 → 2015-06-19 17:00 (-40d) | 2015-07-29 → 2015-06-19 18:00 (-40d) | 1d → 0.12d | 0d → 33d |  |  |
| 114 | 1.1- Minuta de reunión versión0.2. | 2015-07-29 → 2015-06-19 17:00 (-40d) | 2015-07-29 → 2015-06-19 18:00 (-40d) | 1d → 1h | 0d → 33d |  | resources none → Lider |
| 115 | **2- Diseño version 0.2** | 2015-07-30 → 2015-06-19 18:00 (-41d) | 2015-07-30 → 2015-06-22 11:00 (-38d) | 1d → 0.38d | 0d → 33d |  |  |
| 116 | 2.1- Maquetación versión0.2. | 2015-07-30 → 2015-06-19 18:00 (-41d) | 2015-07-30 → 2015-06-22 11:00 (-38d) | 1d → 3h | 0d → 33d |  | resources none → Diseñador |
| 117 | 2.2- Mapa de naveción versión0.2. | 2015-07-30 → 2015-06-19 18:00 (-41d) | 2015-07-30 → 2015-06-22 11:00 (-38d) | 1d → 3h | 0d → 33d |  | resources none → Diseñador |
| 118 | **3- Codificación versión0.2** | 2015-07-31 → 2015-06-22 11:00 (-39d) | 2015-07-31 → 2015-06-24 12:00 (-37d) | 1d → 2.12d | 0d → 33d |  |  |
| 119 | 3.1- Aceptación de los módulos. | 2015-07-31 → 2015-06-22 11:00 (-39d) | 2015-07-31 → 2015-06-24 12:00 (-37d) | 1d → 17h | 0d → 33d |  | resources none → Programador |
| 120 | **4.-Pruebas versión 0.2** | 2015-08-03 → 2015-06-24 12:00 (-40d) | 2015-08-06 → 2015-06-26 12:00 (-41d) | 4d → 2d | 0d → 33d |  |  |
| 121 | 4.1- Pruebas de rendimiento versión0.2. | 2015-08-03 → 2015-06-24 12:00 (-40d) | 2015-08-04 → 2015-06-25 12:00 (-40d) | 2d → 8h | 0d → 33d |  | resources none → Tester |
| 122 | 4.2- Pruebas del sistema 0.2. | 2015-08-05 → 2015-06-25 12:00 (-41d) | 2015-08-06 → 2015-06-26 12:00 (-41d) | 2d → 8h | 0d → 33d |  | resources none → Tester |
| 123 | **5.-Implementación** | 2015-08-07 → 2015-06-26 12:00 (-42d) | 2015-08-10 → 2015-06-29 10:00 (-42d) | 2d → 0.75d | 0d → 33d |  |  |
| 124 | 5.1-Elección del Hosting. | 2015-08-07 → 2015-06-26 12:00 (-42d) | 2015-08-07 → 2015-06-26 17:00 (-42d) | 1d → 3h | 0d → 33d |  | resources none → Programador |
| 125 | 5.2-Copiar los archivos fuente. | 2015-08-10 → 2015-06-26 17:00 (-45d) | 2015-08-10 → 2015-06-29 10:00 (-42d) | 1d → 3h | 0d → 33d |  | resources none → Programador |
| 126 | **6.-Cierre del Proyecto.** | 2015-08-11 → 2015-06-29 10:00 (-43d) | 2015-08-13 → 2015-06-30 16:00 (-44d) | 3d → 1.5d | 0d → 33d | 123 → none |  |
| 127 | 6.1-Carta de Aceptación. | 2015-08-11 → 2015-06-29 10:00 (-43d) | 2015-08-11 → 2015-06-29 11:00 (-43d) | 1d → 1h | 3d → 33d |  | resources none → Lider |
| 128 | 6.2-Acta de cierrede proyectos. | 2015-08-11 → 2015-06-29 11:00 (-43d) | 2015-08-11 → 2015-06-29 12:00 (-43d) | 1d → 1h | 0d → 33d | 125 → 127 | resources none → Lider |
| 129 | 6.3-Evaluación de desempeño. | 2015-08-12 → 2015-06-29 12:00 (-44d) | 2015-08-12 → 2015-06-29 17:00 (-44d) | 1d → 3h | 2d → 33d |  | resources none → Lider |
| 130 | 6.4-Liberación de recursos. | 2015-08-12 → 2015-06-29 17:00 (-44d) | 2015-08-12 → 2015-06-29 19:00 (-44d) | 1d → 2h | 2d → 33d | 128 → 129 | resources none → Lider |
| 131 | 6.5-Lecciones aprendidas. | 2015-08-12 → 2015-06-30 09:00 (-43d) | 2015-08-12 → 2015-06-30 12:00 (-43d) | 1d → 3h | 0d → 33d | 128 → 130 | constraint none → start no earlier than 2015-06-12 09:00; resources none → Lider |
| 132 | 6.6-Informe final(cierre). | 2015-08-13 → 2015-06-30 12:00 (-44d) | 2015-08-13 → 2015-06-30 16:00 (-44d) | 1d → 2h | 0d → 33d |  | resources none → Lider |
| 133 | 7.- Entrega final versión 0.3 | 2015-08-14 → 2015-06-30 16:00 (-45d) | 2015-08-14 → 2015-06-30 19:00 (-45d) | 1d → 3h | 0d → 33d |  | resources none → Lider |

## Version 3 (saved 2015-06-27)

Note of the change: Fase de riesgos y costos

Last finish 2015-08-14 → 2015-06-30 (-45d).

Changed:

| ID | Task | Finish | Duration | Other |
| --- | --- | --- | --- | --- |
| 1 | **Teresa Martin** | 2015-08-14 19:00 → 2015-06-30 19:00 (-45d) | 80d? → 47d | constraint start no earlier than 2015-04-27 09:00 → none |

## Version 4 (saved 2015-07-04)

Note of the change: Restructura de capetas

Last finish 2015-06-30 → 2015-06-19 (-11d).

Added:

| ID | Task | Duration | Start | Finish | Predecessors | Constraint | Resources |
| --- | --- | --- | --- | --- | --- | --- | --- |
| 2 | **Planeación de proyecto.** | 3.5d | 2015-04-06 09:00 | 2015-04-09 13:00 |  |  |  |
| 3 | Carta de iniciación del proyecto. | 2h | 2015-04-06 09:00 | 2015-04-06 11:00 |  |  | Lider |
| 4 | Minuta de reunión de arranque. | 2h | 2015-04-06 11:00 | 2015-04-06 13:00 | 3 | start no earlier than 2015-04-06 09:00 | Lider |
| 5 | Políticas. | 3h | 2015-04-06 15:00 | 2015-04-06 18:00 | 4 |  | Lider |
| 6 | Organigrama. | 1h | 2015-04-06 18:00 | 2015-04-06 19:00 | 5 |  | Lider |
| 7 | Alcance. | 1h | 2015-04-07 09:00 | 2015-04-07 10:00 | 6 | start no earlier than 2015-04-07 09:00 | Lider |
| 8 | Plan de CM | 2h | 2015-04-07 10:00 | 2015-04-07 12:00 | 7 |  | Lider |
| 9 | Definicion de ciclo de vida. | 1h | 2015-04-07 12:00 | 2015-04-07 13:00 | 8 |  |  |
| 10 | Matriz de responsabilidades. | 4h | 2015-04-07 15:00 | 2015-04-07 19:00 | 9 |  | Lider |
| 11 | Diagrama de Gantt(Wbs). | 3h | 2015-04-08 09:00 | 2015-04-08 12:00 | 10 |  |  |
| 12 | Plan de alcance. | 1h | 2015-04-08 12:00 | 2015-04-08 13:00 | 11 |  | Lider |
| 13 | Matriz de comunicación y justificación. | 3h | 2015-04-08 15:00 | 2015-04-08 18:00 | 12 |  | Lider |
| 14 | Plan de proyecto | 4h | 2015-04-09 09:00 | 2015-04-09 13:00 | 13 | start no earlier than 2015-04-09 09:00 | Analista; Lider |
| 15 | **Primera iteracion** | 24.75d | 2015-04-09 15:00 | 2015-05-14 11:00 | 2 |  |  |
| 21 | Identificar los req. funcionales. | 3h | 2015-04-13 12:00 | 2015-04-13 17:00 | 20 |  | Analista |
| 22 | Identificar los req. no funcionales. | 1h | 2015-04-13 17:00 | 2015-04-13 18:00 | 21 |  | Analista |
| 23 | Especificación de req. Funcionales y no funcionales | 4h | 2015-04-14 09:00 | 2015-04-14 13:00 | 22 | start no earlier than 2015-04-14 09:00 | Analista |
| 24 | Gestión de req. Funcionales y no funcionales | 4h | 2015-04-14 15:00 | 2015-04-14 19:00 | 23 |  | Analista |
| 26 | Justificar el patrón de diseño a utilizar. | 2h | 2015-04-15 09:00 | 2015-04-15 11:00 | 24 |  | Diseñador |
| 80 | **Segunda iteracion** | 14.75d | 2015-05-14 11:00 | 2015-06-03 19:00 | 15 |  |  |
| 105 | **Tercera interacion** | 8.75d | 2015-06-04 09:00 | 2015-06-16 17:00 | 80 |  |  |
| 112 | Módulo alumnos versión0.2. | 10h | 2015-06-04 15:00 | 2015-06-05 17:00 |  |  | Programador; Diseñador |
| 113 | Módulo pagos versión0.2. | 10h | 2015-06-05 17:00 | 2015-06-08 19:00 | 112 |  | Programador; Diseñador |
| 114 | Módulo becas versión0.2. | 10h | 2015-06-09 09:00 | 2015-06-10 11:00 | 113 |  | Programador; Diseñador |
| 115 | Módulo reportes versión0.2. | 10h | 2015-06-10 11:00 | 2015-06-11 13:00 | 114 |  | Programador; Diseñador |
| 116 | Módulo ciclos versión0.2. | 10h | 2015-06-11 15:00 | 2015-06-12 17:00 | 115 |  | Diseñador; Programador |

Removed: 3 1.1-Carta de iniciación del proyecto.; 4 1.2-Elicitacion; 9 1.3- Minuta de reunión de arranque.; 10 1.4- Planeación de proyecto.; 11 1.4.1- Descripción de la problemática.; 12 1.4.2- Organigrama.; 13 1.4.3- Alcance.; 14 1.4.4- Elementos clave para su planeación, monitoreo y control.; 15 1.4.5- Perfiles de los participantes y del administrador.; 16 1.4.6- Diagrama de Gantt(Wbs).; 17 1.4.6.1- Matriz de responsabilidades.; 18 1.4.6.2- Diagrama de la ruta critica.; 19 1.4.7- Lista de factores clave de desempeño.; 20 1.4.8- Matriz de comunicación y justificación.; 21 1.5- Definición de estandar de calidad.; 22 1.5.1- Gestión del alcance.; 23 1.5.2- Gestión del tiempo.; 24 1.5.3- Gestión de costos.; 25 1.5.4- Gestión de calidad.; 26 1.6- Definicion de ciclo de vida.; 27 1.6.1- Justificación de los procesos.; 28 1.7- Script(plantilla) del proceso de admón.; 29 1.7.1- Políticas.; 30 1.8- Mercado meta.; 31 1.9- Justificar el patrón de diseño a utilizar.; 32 1.10- Identificar los req. funcionales.; 33 1.11- Identificar los req. no funcionales.; 101 3.1-Corrección en alguno de los módulos.; 119 3.1- Aceptación de los módulos.

Changed:

| ID | Task | Start | Finish | Duration | Total float | Predecessors | Other |
| --- | --- | --- | --- | --- | --- | --- | --- |
| 1 | **Teresa Martin** | 2015-04-27 09:00 → 2015-04-06 09:00 (-21d) | 2015-06-30 19:00 → 2015-06-19 19:00 (-11d) | 47d → 55d | 0d → none |  |  |
| 16 | **Análisis** | 2015-04-27 09:00 → 2015-04-09 15:00 (-18d) | 2015-05-06 19:00 → 2015-04-14 19:00 (-22d) | 8d → 3.5d | none → 5.25d | none → 2 | was named 1- Análisis |
| 17 | Evaluar proveedores de req. a entrevistar | 2015-04-27 09:00 → 2015-04-09 15:00 (-18d) | 2015-04-27 13:00 → 2015-04-09 19:00 (-18d) |  | 1.38d → 5.5d | none → 14 | was named 1.2.1- Evaluar proveedores de req. a entrevistar |
| 18 | Definicion de estrategia de recoleccion de req. | 2015-04-27 15:00 → 2015-04-10 09:00 (-17d) | 2015-04-27 19:00 → 2015-04-10 13:00 (-17d) |  | 1.38d → 5.5d |  | was named 1.2.2- Definicion de estrategia de recoleccion de req. |
| 19 | Planificar reuniones de elicitación de req. | 2015-04-28 09:00 → 2015-04-10 15:00 (-18d) | 2015-04-28 12:00 → 2015-04-10 18:00 (-18d) |  | 1.38d → 5.5d |  | was named 1.2.3- Planificar reuniones de elicitación de req. |
| 20 | Identificar procesos del sistema. | 2015-04-28 12:00 → 2015-04-13 09:00 (-15d) | 2015-04-28 17:00 → 2015-04-13 12:00 (-15d) |  | 1.38d → 5.38d |  | was named 1.2.4- Identificar procesos del sistema.; constraint start no earlier than 2015-04-08 09:00 → start no earlier than 2015-04-13 09:00 |
| 25 | **Diseño** | 2015-05-07 09:00 → 2015-04-15 09:00 (-22d) | 2015-05-13 18:00 → 2015-04-22 13:00 (-21d) | 4.88d → 5.5d | 0.38d → 4.62d |  | was named 2- Diseño |
| 27 | Estructura del Proyecto. | 2015-05-07 09:00 → 2015-04-15 11:00 (-22d) | 2015-05-07 11:00 → 2015-04-15 13:00 (-22d) |  | 0.38d → 5.25d | 1.11- Identificar los req. no funcionales. → 26 | was named 2.1- Estructura del Proyecto. |
| 28 | Diagrama de actividades. | 2015-05-07 11:00 → 2015-04-15 15:00 (-22d) | 2015-05-07 13:00 → 2015-04-15 17:00 (-22d) |  | 0.38d → 5.25d |  | was named 2.2-Diagrama de actividades. |
| 29 | Diagramas de casos de uso. | 2015-05-07 15:00 → 2015-04-16 09:00 (-21d) | 2015-05-07 19:00 → 2015-04-16 11:00 (-21d) | 4h → 2h | 0.38d → 5d |  | was named 2.3- Diagramas de casos de uso.; constraint none → start no earlier than 2015-04-16 09:00 |
| 30 | Diagramas de secuencia. | 2015-05-08 09:00 → 2015-04-16 11:00 (-22d) | 2015-05-08 12:00 → 2015-04-16 16:00 (-22d) |  | 0.38d → 5d |  | was named 2.4- Diagramas de secuencia.; constraint start no earlier than 2015-04-20 09:00 → start no earlier than 2015-04-16 09:00 |
| 31 | Diagra de clases. | 2015-05-08 12:00 → 2015-04-17 09:00 (-21d) | 2015-05-08 18:00 → 2015-04-17 13:00 (-21d) |  | 0.38d → 4.62d |  | was named 2.5- Diagra de clases.; constraint start no earlier than 2015-04-20 09:00 → start no earlier than 2015-04-17 09:00 |
| 32 | Diagrama de rol. | 2015-05-08 18:00 → 2015-04-17 15:00 (-21d) | 2015-05-11 10:00 → 2015-04-17 17:00 (-24d) |  | 0.38d → 4.62d |  | was named 2.6- Diagrama de rol.; constraint start no earlier than 2015-04-21 09:00 → start no earlier than 2015-04-17 09:00 |
| 33 | Diagrama de interación. | 2015-05-11 10:00 → 2015-04-17 17:00 (-24d) | 2015-05-11 12:00 → 2015-04-17 19:00 (-24d) |  | 0.38d → 4.62d |  | was named 2.7-Diagrama de interación.; constraint start no earlier than 2015-04-21 09:00 → start no earlier than 2015-04-17 09:00 |
| 34 | Diagrama de componentes. | 2015-05-11 12:00 → 2015-04-20 09:00 (-21d) | 2015-05-11 16:00 → 2015-04-20 11:00 (-21d) |  | 0.38d → 4.62d |  | was named 2.8-Diagrama de componentes.; constraint start no earlier than 2015-04-21 09:00 → start no earlier than 2015-04-20 09:00 |
| 35 | Diagrama despliegue. | 2015-05-11 16:00 → 2015-04-20 11:00 (-21d) | 2015-05-11 18:00 → 2015-04-20 13:00 (-21d) |  | 0.38d → 4.62d |  | was named 2.9- Diagrama despliegue.; constraint start no earlier than 2015-04-21 09:00 → start no earlier than 2015-04-20 09:00 |
| 36 | **Base de datos.** | 2015-05-11 18:00 → 2015-04-20 15:00 (-21d) | 2015-05-12 18:00 → 2015-04-21 13:00 (-21d) |  | 0.38d → 4.62d |  | was named 2.10- Base de datos. |
| 37 | Diagrama entidad relación. | 2015-05-11 18:00 → 2015-04-20 15:00 (-21d) | 2015-05-12 12:00 → 2015-04-20 19:00 (-22d) | 4h → 0.5d | 0.38d → 4.62d |  | was named 2.10.1- Diagrama entidad relación. |
| 38 | Diagrama relacional. | 2015-05-12 12:00 → 2015-04-21 09:00 (-21d) | 2015-05-12 18:00 → 2015-04-21 13:00 (-21d) |  | 0.38d → 4.62d |  | was named 2.10.2-Diagrama relacional. |
| 39 | Maquetación. | 2015-05-12 18:00 → 2015-04-21 15:00 (-21d) | 2015-05-13 12:00 → 2015-04-21 19:00 (-22d) |  | 0.38d → 4.62d |  | was named 2.11- Maquetación. |
| 40 | Mapa de naveción. | 2015-05-13 12:00 → 2015-04-22 09:00 (-21d) | 2015-05-13 18:00 → 2015-04-22 13:00 (-21d) |  | 0.38d → 4.62d |  | was named 2.12- Mapa de naveción. |
| 41 | **Codificación** | 2015-05-13 18:00 → 2015-04-22 15:00 (-21d) | 2015-05-28 13:00 → 2015-05-12 13:00 (-16d) | 10.62d → 14d | 0.38d → 1.25d |  | was named 3- Codificación |
| 42 | Creación de la DB. | 2015-05-13 18:00 → 2015-04-22 15:00 (-21d) | 2015-05-14 11:00 → 2015-04-22 18:00 (-22d) |  | 0.38d → 4.62d |  | was named 3.1-Creación de la DB. |
| 43 | Conexión a DB. | 2015-05-14 11:00 → 2015-04-22 18:00 (-22d) | 2015-05-14 13:00 → 2015-04-23 10:00 (-21d) |  | 0.38d → 4.62d |  | was named 3.2-Conexión a DB. |
| 44 | **Módulo alumnos** | 2015-05-14 15:00 → 2015-04-24 09:00 (-20d) | 2015-05-20 13:00 → 2015-04-30 19:00 (-20d) | 4d → 5d | 0.38d → 2.75d |  | was named 3.3- Módulo alumnos |
| 45 | Interfaz. | 2015-05-14 15:00 → 2015-04-24 09:00 (-20d) | 2015-05-18 13:00 → 2015-04-27 19:00 (-21d) |  | 0.38d → 3.75d |  | was named 3.3.1-Interfaz.; constraint start no earlier than 2015-04-27 09:00 → start no earlier than 2015-04-24 09:00 |
| 46 | Alta de alumno. | 2015-05-18 15:00 → 2015-04-28 09:00 (-20d) | 2015-05-19 11:00 → 2015-04-28 17:00 (-21d) |  | 0.38d → 3.75d |  | was named 3.3.3-Alta de alumno. |
| 47 | Baja de alumno. | 2015-05-19 11:00 → 2015-04-28 17:00 (-21d) | 2015-05-19 13:00 → 2015-04-28 19:00 (-21d) |  | 0.38d → 3.75d |  | was named 3.3.4-Baja de alumno. |
| 48 | Actualización de alumno. | 2015-05-19 15:00 → 2015-04-30 09:00 (-19d) | 2015-05-20 10:00 → 2015-04-30 16:00 (-20d) |  | 0.38d → 2.75d |  | was named 3.3.5-Actualización de alumno. |
| 49 | Consultar alumnos. | 2015-05-20 10:00 → 2015-04-30 16:00 (-20d) | 2015-05-20 13:00 → 2015-04-30 19:00 (-20d) |  | 0.38d → 2.75d |  | was named 3.3.6- Consultar alumnos. |
| 50 | **Módulo pagos** | 2015-05-20 15:00 → 2015-05-01 09:00 (-19d) | 2015-05-22 11:00 → 2015-05-04 17:00 (-18d) |  | 0.38d → 2.75d |  | was named 3.4-Módulo pagos |
| 51 | Interfaz. | 2015-05-20 15:00 → 2015-05-01 09:00 (-19d) | 2015-05-20 19:00 → 2015-05-01 13:00 (-19d) |  | 0.38d → 2.75d |  | was named 3.4.1- interfaz. |
| 52 | Pago de colegiaturas. | 2015-05-21 09:00 → 2015-05-01 15:00 (-20d) | 2015-05-21 13:00 → 2015-05-01 19:00 (-20d) |  | 0.38d → 2.75d |  | was named 3.4.2- Pago de colegiaturas. |
| 53 | Editar pago. | 2015-05-21 15:00 → 2015-05-04 09:00 (-17d) | 2015-05-21 18:00 → 2015-05-04 12:00 (-17d) |  | 0.38d → 2.75d |  | was named 3.4.3- Editar pago. |
| 54 | Eliminar pago. | 2015-05-21 18:00 → 2015-05-04 12:00 (-17d) | 2015-05-21 19:00 → 2015-05-04 13:00 (-17d) |  | 0.38d → 2.75d |  | was named 3.4.4- Eliminar pago. |
| 55 | Consultar pago. | 2015-05-22 09:00 → 2015-05-04 15:00 (-18d) | 2015-05-22 11:00 → 2015-05-04 17:00 (-18d) |  | 0.38d → 2.75d |  | was named 3.4.5- Consultar pago. |
| 56 | **Módulo becas** | 2015-05-22 11:00 → 2015-05-04 17:00 (-18d) | 2015-05-26 17:00 → 2015-05-07 13:00 (-19d) | 2.5d → 2.75d | 0.38d → 2.5d |  | was named 3.5- Módulo becas |
| 57 | Interfaz. | 2015-05-22 11:00 → 2015-05-04 17:00 (-18d) | 2015-05-25 13:00 → 2015-05-05 19:00 (-20d) |  | 0.38d → 2.75d |  | was named 3.5.1- Interfaz. |
| 58 | Asignar beca. | 2015-05-25 15:00 → 2015-05-06 09:00 (-19d) | 2015-05-25 18:00 → 2015-05-06 12:00 (-19d) |  | 0.38d → 2.75d |  | was named 3.5.2- Asignar beca. |
| 59 | Editar beca. | 2015-05-25 18:00 → 2015-05-06 12:00 (-19d) | 2015-05-26 11:00 → 2015-05-06 17:00 (-20d) |  | 0.38d → 2.75d |  | was named 3.5.3- Editar beca. |
| 60 | Eliminar beca. | 2015-05-26 11:00 → 2015-05-07 09:00 (-19d) | 2015-05-26 13:00 → 2015-05-07 11:00 (-19d) |  | 0.38d → 2.5d |  | was named 3.5.4- Eliminar beca. |
| 61 | Consultar beca. | 2015-05-26 15:00 → 2015-05-07 11:00 (-19d) | 2015-05-26 17:00 → 2015-05-07 13:00 (-19d) |  | 0.38d → 2.5d |  | was named 3.5.6- Consultar beca. |
| 62 | **Módulo Reportes** | 2015-05-26 17:00 → 2015-05-07 15:00 (-19d) | 2015-05-27 17:00 → 2015-05-08 19:00 (-19d) | 1d → 1.5d | 0.38d → 2d |  | was named 3.6- Módulo Reportes |
| 63 | Interfaz. | 2015-05-26 17:00 → 2015-05-07 15:00 (-19d) | 2015-05-27 17:00 → 2015-05-08 13:00 (-19d) |  | 0.38d → 2.5d |  | was named 3.6.1- Interfaz. |
| 64 | Consultar pagos. | 2015-05-26 17:00 → 2015-05-08 09:00 (-18d) | 2015-05-26 19:00 → 2015-05-08 11:00 (-18d) |  | 0.38d → 2d |  | was named 3.6.2- Consultar pagos. |
| 65 | Consultar alumnos. | 2015-05-27 09:00 → 2015-05-08 11:00 (-19d) | 2015-05-27 11:00 → 2015-05-08 13:00 (-19d) |  | 0.38d → 2d |  | was named 3.6.3- Consultar alumnos. |
| 66 | Colsultar becas. | 2015-05-27 11:00 → 2015-05-08 15:00 (-19d) | 2015-05-27 13:00 → 2015-05-08 17:00 (-19d) |  | 0.38d → 2d |  | was named 3.6.4- Colsultar becas. |
| 67 | Consultar ciclos. | 2015-05-27 15:00 → 2015-05-08 17:00 (-19d) | 2015-05-27 17:00 → 2015-05-08 19:00 (-19d) |  | 0.38d → 2d |  | was named 3.6.5- Consultar ciclos. |
| 68 | **Módulo Ciclos** | 2015-05-27 17:00 → 2015-05-11 09:00 (-16d) | 2015-05-28 13:00 → 2015-05-12 13:00 (-16d) | 0.75d → 1.5d | 0.38d → 1.25d |  | was named 3.7- Módulo Ciclos |
| 69 | Interfaz. | 2015-05-27 17:00 → 2015-05-11 09:00 (-16d) | 2015-05-28 13:00 → 2015-05-11 17:00 (-17d) |  | 0.38d → 2d |  | was named 3.7.1- Interfaz. |
| 70 | Asignar ciclo. | 2015-05-27 17:00 → 2015-05-12 09:00 (-15d) | 2015-05-27 19:00 → 2015-05-12 11:00 (-15d) |  | 0.62d → 1.25d |  | was named 3.7.2- Asignar ciclo. |
| 71 | Editar ciclo. | 2015-05-28 09:00 → 2015-05-12 11:00 (-16d) | 2015-05-28 11:00 → 2015-05-12 13:00 (-16d) |  | 0.62d → 1.25d |  | was named 3.7.3- Editar ciclo. |
| 72 | Eliminar ciclo. | 2015-05-28 09:00 → 2015-05-12 11:00 (-16d) | 2015-05-28 11:00 → 2015-05-12 13:00 (-16d) |  | 0.62d → 1.25d |  | was named 3.7.4- Eliminar ciclo. |
| 73 | Consultar ciclo. | 2015-05-28 09:00 → 2015-05-12 11:00 (-16d) | 2015-05-28 11:00 → 2015-05-12 13:00 (-16d) |  | 0.62d → 1.25d |  | was named 3.7.5- Consultar ciclo. |
| 74 | **Pruebas** | 2015-05-28 15:00 → 2015-05-12 15:00 (-16d) | 2015-05-29 13:00 → 2015-05-13 13:00 (-16d) |  | 0.38d → 1.25d |  | was named 4.-Pruebas |
| 75 | Pruebas unitarias. | 2015-05-28 15:00 → 2015-05-12 15:00 (-16d) | 2015-05-28 19:00 → 2015-05-12 19:00 (-16d) |  | 0.88d → 1.75d |  | was named 4.1-Pruebas unitarias. |
| 76 | Pruebas de integración. | 2015-05-28 15:00 → 2015-05-12 15:00 (-16d) | 2015-05-28 19:00 → 2015-05-12 19:00 (-16d) |  | 0.38d → 1.25d |  | was named 4.2-Pruebas de integración. |
| 77 | Pruebas de rendimiento. | 2015-05-29 09:00 → 2015-05-13 09:00 (-16d) | 2015-05-29 13:00 → 2015-05-13 13:00 (-16d) |  | 0.38d → 1.25d |  | was named 4.3-Pruebas de rendimiento. |
| 78 | Pruebas del sistema. | 2015-05-29 09:00 → 2015-05-13 09:00 (-16d) | 2015-05-29 13:00 → 2015-05-13 13:00 (-16d) |  | 0.38d → 1.25d |  | was named 4.4-Pruebas del sistema. |
| 79 | Entrega Versión base | 2015-05-29 15:00 → 2015-05-14 09:00 (-15d) | 2015-05-29 17:00 → 2015-05-14 11:00 (-15d) |  | 0.38d → 0.75d |  | was named 5.- Entrega Versión 0.1 |
| 81 | **Análisis versión 0.1** | 2015-05-29 17:00 → 2015-05-14 11:00 (-15d) | 2015-06-02 11:00 → 2015-05-15 13:00 (-18d) | 1.5d → 1.25d | 0d → 0.62d |  | was named 1- Análisis versión 0.1 |
| 82 | Identificar procesos del sistema. | 2015-05-29 17:00 → 2015-05-14 11:00 (-15d) | 2015-06-01 10:00 → 2015-05-14 16:00 (-18d) |  | 0.38d → 0.75d |  | was named 1.1- Identificar procesos del sistema. |
| 83 | Minuta de reunión. | 2015-06-01 10:00 → 2015-05-14 16:00 (-18d) | 2015-06-01 12:00 → 2015-05-14 18:00 (-18d) |  | 0.38d → 0.75d |  | was named 1.2- Minuta de reunión. |
| 84 | Identificar los req. funcionales. | 2015-06-01 17:00 → 2015-05-15 09:00 (-17d) | 2015-06-01 19:00 → 2015-05-15 11:00 (-17d) |  | 0d → 0.62d |  | was named 1.3- Identificar los req. funcionales.; constraint finish no earlier than 2015-06-01 19:00 → start no earlier than 2015-05-15 09:00 |
| 85 | Identificar los req. no funcionales. | 2015-06-02 09:00 → 2015-05-15 11:00 (-18d) | 2015-06-02 11:00 → 2015-05-15 13:00 (-18d) |  | 0d → 0.62d |  | was named 1.4- Identificar los req. no funcionales. |
| 86 | **Diseño versión 0.1** | 2015-06-02 11:00 → 2015-05-15 15:00 (-18d) | 2015-06-03 12:00 → 2015-05-18 16:00 (-16d) |  | 0d → 0.62d |  | was named 2- Diseño versión 0.1 |
| 87 | Diagrama de rol. | 2015-06-02 11:00 → 2015-05-15 15:00 (-18d) | 2015-06-02 13:00 → 2015-05-15 17:00 (-18d) |  | 0d → 0.62d |  | was named 2.1- Diagrama de rol. |
| 88 | Diagrama de interación. | 2015-06-02 15:00 → 2015-05-15 17:00 (-18d) | 2015-06-02 17:00 → 2015-05-15 19:00 (-18d) |  | 0d → 0.62d |  | was named 2.2-Diagrama de interación. |
| 89 | Diagrama de componentes. | 2015-06-02 17:00 → 2015-05-18 09:00 (-15d) | 2015-06-02 19:00 → 2015-05-18 11:00 (-15d) |  | 0d → 0.62d |  | was named 2.3- Diagrama de componentes. |
| 90 | Diagrama despliegue. | 2015-06-03 09:00 → 2015-05-18 11:00 (-16d) | 2015-06-03 10:00 → 2015-05-18 12:00 (-16d) |  | 0d → 0.62d |  | was named 2.4- Diagrama despliegue. |

| ID | Task | Start | Finish | Duration | Total float | Predecessors | Other |
| --- | --- | --- | --- | --- | --- | --- | --- |
| 91 | Maquetación. | 2015-06-03 10:00 → 2015-05-18 12:00 (-16d) | 2015-06-03 11:00 → 2015-05-18 13:00 (-16d) |  | 0d → 0.62d |  | was named 2.5- Maquetación. |
| 92 | Mapa de naveción. | 2015-06-03 11:00 → 2015-05-18 15:00 (-16d) | 2015-06-03 12:00 → 2015-05-18 16:00 (-16d) |  | 0d → 0.62d |  | was named 2.6- Mapa de naveción. |
| 93 | **Codificación versión 0.1** | 2015-06-03 12:00 → 2015-05-18 16:00 (-16d) | 2015-06-17 12:00 → 2015-06-01 16:00 (-16d) |  | 0d → 0.62d |  | was named 3- Codificación versión 0.1 |
| 94 | Módulo alumnos versión0.1. | 2015-06-03 12:00 → 2015-05-18 16:00 (-16d) | 2015-06-05 12:00 → 2015-05-20 16:00 (-16d) |  | 0d → 0.62d |  | was named 3.1.1- Módulo alumnos versión0.1. |
| 95 | Módulo pagos versión0.1. | 2015-06-05 12:00 → 2015-05-20 16:00 (-16d) | 2015-06-09 12:00 → 2015-05-22 16:00 (-18d) |  | 0d → 0.62d |  | was named 3.1.2- Módulo pagos versión0.1. |
| 96 | Módulo becas versión0.1. | 2015-06-09 12:00 → 2015-05-22 16:00 (-18d) | 2015-06-11 12:00 → 2015-05-26 16:00 (-16d) |  | 0d → 0.62d |  | was named 3.1.3- Módulo becas versión0.1. |
| 97 | Módulo reportes versión0.1. | 2015-06-11 12:00 → 2015-05-26 16:00 (-16d) | 2015-06-15 12:00 → 2015-05-28 16:00 (-18d) |  | 0d → 0.62d |  | was named 3.1.4- Módulo reportes versión0.1. |
| 98 | Módulo ciclos versión0.1. | 2015-06-15 12:00 → 2015-05-28 16:00 (-18d) | 2015-06-17 12:00 → 2015-06-01 16:00 (-16d) |  | 0d → 0.62d |  | was named 3.1.5- Módulo ciclos versión0.1. |
| 99 | **Pruebas versión 0.1** | 2015-06-17 12:00 → 2015-06-01 16:00 (-16d) | 2015-06-19 12:00 → 2015-06-03 16:00 (-16d) |  | 0d → 0.62d |  | was named 4.-Pruebas versión 0.1 |
| 100 | Pruebas unitarias versión0.1. | 2015-06-17 12:00 → 2015-06-01 16:00 (-16d) | 2015-06-17 18:00 → 2015-06-02 10:00 (-15d) |  | 0d → 0.62d |  | was named 4.1-Pruebas unitarias versión0.1. |
| 101 | Pruebas de integración versión0.1. | 2015-06-17 18:00 → 2015-06-02 10:00 (-15d) | 2015-06-18 12:00 → 2015-06-02 16:00 (-16d) |  | 0d → 0.62d |  | was named 4.2-Pruebas de integración versión0.1. |
| 102 | Pruebas de rendimiento versión0.1. | 2015-06-18 12:00 → 2015-06-02 16:00 (-16d) | 2015-06-18 18:00 → 2015-06-03 10:00 (-15d) |  | 0d → 0.62d |  | was named 4.3-Pruebas de rendimiento versión0.1. |
| 103 | Pruebas del sistema versión0.1. | 2015-06-18 18:00 → 2015-06-03 10:00 (-15d) | 2015-06-19 12:00 → 2015-06-03 16:00 (-16d) |  | 0d → 0.62d |  | was named 4.4-Pruebas del sistema versión0.1. |
| 104 | Entrega versión 0.1 | 2015-06-19 12:00 → 2015-06-03 16:00 (-16d) | 2015-06-19 17:00 → 2015-06-03 19:00 (-16d) |  | 0d → 0.62d |  | was named 5.- Entrega versión 0.2 |
| 106 | **Análisis versió 0.2** | 2015-06-19 17:00 → 2015-06-04 09:00 (-15d) | 2015-06-19 18:00 → 2015-06-04 10:00 (-15d) |  | 0d → 0.62d |  | was named 1- Análisis versió 0.2 |
| 107 | Minuta de reunión versión0.2. | 2015-06-19 17:00 → 2015-06-04 09:00 (-15d) | 2015-06-19 18:00 → 2015-06-04 10:00 (-15d) |  | 0d → 0.62d |  | was named 1.1- Minuta de reunión versión0.2. |
| 108 | **Diseño version 0.2** | 2015-06-19 18:00 → 2015-06-04 10:00 (-15d) | 2015-06-22 11:00 → 2015-06-04 13:00 (-18d) |  | 0d → 0.62d |  | was named 2- Diseño version 0.2 |
| 109 | Maquetación versión0.2. | 2015-06-19 18:00 → 2015-06-04 10:00 (-15d) | 2015-06-22 11:00 → 2015-06-04 13:00 (-18d) |  | 0d → 0.62d |  | was named 2.1- Maquetación versión0.2. |
| 110 | Mapa de naveción versión0.2. | 2015-06-19 18:00 → 2015-06-04 10:00 (-15d) | 2015-06-22 11:00 → 2015-06-04 13:00 (-18d) |  | 0d → 0.62d |  | was named 2.2- Mapa de naveción versión0.2. |
| 111 | **Codificación versión0.2** | 2015-06-22 11:00 → 2015-06-04 15:00 (-18d) | 2015-06-24 12:00 → 2015-06-12 17:00 (-12d) | 2.12d → 6.25d | 0d → 0.62d |  | was named 3- Codificación versión0.2 |
| 117 | **Pruebas versión 0.2** | 2015-06-24 12:00 → 2015-06-12 17:00 (-12d) | 2015-06-26 12:00 → 2015-06-16 17:00 (-10d) |  | 0d → 0.62d |  | was named 4.-Pruebas versión 0.2 |
| 118 | Pruebas de rendimiento versión0.2. | 2015-06-24 12:00 → 2015-06-12 17:00 (-12d) | 2015-06-25 12:00 → 2015-06-15 17:00 (-10d) |  | 0d → 0.62d | 3.1- Aceptación de los módulos. → none | was named 4.1- Pruebas de rendimiento versión0.2. |
| 119 | Pruebas del sistema 0.2. | 2015-06-25 12:00 → 2015-06-15 17:00 (-10d) | 2015-06-26 12:00 → 2015-06-16 17:00 (-10d) |  | 0d → 0.62d |  | was named 4.2- Pruebas del sistema 0.2. |
| 120 | **Implementación** | 2015-06-26 12:00 → 2015-06-16 17:00 (-10d) | 2015-06-29 10:00 → 2015-06-17 13:00 (-12d) |  | 0d → 0.62d | 117 → 105 | was named 5.-Implementación |
| 121 | Elección del Hosting. | 2015-06-26 12:00 → 2015-06-16 17:00 (-10d) | 2015-06-26 17:00 → 2015-06-17 10:00 (-9d) |  | 0d → 0.62d |  | was named 5.1-Elección del Hosting. |
| 122 | Copiar los archivos fuente. | 2015-06-26 17:00 → 2015-06-17 10:00 (-9d) | 2015-06-29 10:00 → 2015-06-17 13:00 (-12d) |  | 0d → 0.62d |  | was named 5.2-Copiar los archivos fuente. |
| 123 | **Cierre del Proyecto.** | 2015-06-29 10:00 → 2015-06-17 15:00 (-12d) | 2015-06-30 16:00 → 2015-06-18 19:00 (-12d) |  | 0d → 0.62d | none → 120 | was named 6.-Cierre del Proyecto. |
| 124 | Carta de Aceptación. | 2015-06-29 10:00 → 2015-06-17 15:00 (-12d) | 2015-06-29 11:00 → 2015-06-17 16:00 (-12d) |  | 0d → 0.62d |  | was named 6.1-Carta de Aceptación. |
| 125 | Acta de cierrede proyectos. | 2015-06-29 11:00 → 2015-06-17 16:00 (-12d) | 2015-06-29 12:00 → 2015-06-17 17:00 (-12d) |  | 0d → 0.62d |  | was named 6.2-Acta de cierrede proyectos. |
| 126 | Evaluación de desempeño. | 2015-06-29 12:00 → 2015-06-17 17:00 (-12d) | 2015-06-29 17:00 → 2015-06-18 10:00 (-11d) |  | 0d → 0.62d |  | was named 6.3-Evaluación de desempeño. |
| 127 | Liberación de recursos. | 2015-06-29 17:00 → 2015-06-18 10:00 (-11d) | 2015-06-29 19:00 → 2015-06-18 12:00 (-11d) |  | 0d → 0.62d |  | was named 6.4-Liberación de recursos. |
| 128 | Lecciones aprendidas. | 2015-06-30 09:00 → 2015-06-18 12:00 (-12d) | 2015-06-30 12:00 → 2015-06-18 17:00 (-12d) |  | 0d → 0.62d |  | was named 6.5-Lecciones aprendidas. |
| 129 | Informe final(cierre). | 2015-06-30 12:00 → 2015-06-18 17:00 (-12d) | 2015-06-30 16:00 → 2015-06-18 19:00 (-12d) |  | 0d → 0.62d |  | was named 6.6-Informe final(cierre). |
| 130 | Entrega final versión 0.2 | 2015-06-30 16:00 → 2015-06-19 09:00 (-11d) | 2015-06-30 19:00 → 2015-06-19 12:00 (-11d) |  | 0d → 0.62d |  | was named 7.- Entrega final versión 0.3 |

## Version 5 (saved 2015-07-10)

Note of the change: Actualizacion del proyecto web y correciones de doc.

Last finish 2015-06-19 → 2015-09-04 (+77d).

Added:

| ID | Task | Duration | Start | Finish | Predecessors | Resources |
| --- | --- | --- | --- | --- | --- | --- |
| 15 | 1.13.-No hay planeacion | 13h | 2015-06-19 12:00 | 2015-06-22 19:00 | 14 | Lider |
| 16 | 1.14-Instalaciones están disponibles pero insuficiente (por ejemplo, ningún teléfono, red de cableado, mobiliario, etc) | 13h | 2015-06-23 09:00 | 2015-06-24 16:00 | 15 | Lider |
| 76 | 4.8-El personal necesita tiempo extra para comprender las herramientas de software desconocidas o el entorno | 13h | 2015-07-21 18:00 | 2015-07-23 13:00 | 75 | Lider |
| 83 | 7-Calidad inaceptable requiere de más pruebas, diseño y trabajo de implementación para corregir, más de lo esperado | 13h | 2015-07-27 16:00 | 2015-07-29 11:00 | 82 | Analista; Lider |
| 109 | 6- No se tienen respaldos de las verciones del proyecto | 7h | 2015-08-18 18:00 | 2015-08-19 17:00 | 108 | Lider |

Changed:

| ID | Task | Start | Finish | Duration | Total float | Predecessors | Other |
| --- | --- | --- | --- | --- | --- | --- | --- |
| 1 | **Teresa Martin** | 2015-04-06 09:00 → 2015-06-16 09:00 (+71d) | 2015-06-19 19:00 → 2015-09-04 13:00 (+77d) | 55d → 58.5d | none → 0d |  |  |
| 2 | **1-Planeación de proyecto.** | 2015-04-06 09:00 → 2015-06-16 09:00 (+71d) | 2015-04-09 13:00 → 2015-06-24 16:00 (+76d) | 3.5d → 6.62d | 5.5d → 0d |  | was named Planeación de proyecto. |
| 3 | 1.1-Carta de iniciación del proyecto. | 2015-04-06 09:00 → 2015-06-16 09:00 (+71d) | 2015-04-06 11:00 → 2015-06-16 11:00 (+71d) |  | 5.62d → 0d |  | was named Carta de iniciación del proyecto. |
| 4 | 1.2-Minuta de reunión de arranque. | 2015-04-06 11:00 → 2015-06-16 11:00 (+71d) | 2015-04-06 13:00 → 2015-06-16 13:00 (+71d) |  | 5.62d → 0d |  | was named Minuta de reunión de arranque. |
| 5 | 1.3-Políticas. | 2015-04-06 15:00 → 2015-06-16 15:00 (+71d) | 2015-04-06 18:00 → 2015-06-16 18:00 (+71d) |  | 5.62d → 0d |  | was named Políticas. |
| 6 | 1.4-Organigrama. | 2015-04-06 18:00 → 2015-06-16 18:00 (+71d) | 2015-04-06 19:00 → 2015-06-16 19:00 (+71d) |  | 5.62d → 0d |  | was named Organigrama. |
| 7 | 1.5-Alcance. | 2015-04-07 09:00 → 2015-06-17 09:00 (+71d) | 2015-04-07 10:00 → 2015-06-17 10:00 (+71d) |  | 5.62d → 0d |  | was named Alcance. |
| 8 | 1.6-Plan de CM. | 2015-04-07 10:00 → 2015-06-17 10:00 (+71d) | 2015-04-07 12:00 → 2015-06-17 12:00 (+71d) |  | 5.62d → 0d |  | was named Plan de CM |
| 9 | 1.7-Definición de ciclo de vida. | 2015-04-07 12:00 → 2015-06-17 12:00 (+71d) | 2015-04-07 13:00 → 2015-06-17 13:00 (+71d) |  | 5.62d → 0d |  | was named Definicion de ciclo de vida. |
| 10 | 1.8-Matriz de responsabilidades. | 2015-04-07 15:00 → 2015-06-17 15:00 (+71d) | 2015-04-07 19:00 → 2015-06-17 19:00 (+71d) |  | 5.62d → 0d |  | was named Matriz de responsabilidades. |
| 11 | 1.9-Diagrama de Gantt(Wbs). | 2015-04-08 09:00 → 2015-06-18 09:00 (+71d) | 2015-04-08 12:00 → 2015-06-18 12:00 (+71d) |  | 5.62d → 0d |  | was named Diagrama de Gantt(Wbs). |
| 12 | 1.10-Plan de alcance. | 2015-04-08 12:00 → 2015-06-18 12:00 (+71d) | 2015-04-08 13:00 → 2015-06-18 13:00 (+71d) |  | 5.62d → 0d |  | was named Plan de alcance. |
| 13 | 1.11-Matriz de comunicación y justificación. | 2015-04-08 15:00 → 2015-06-18 15:00 (+71d) | 2015-04-08 18:00 → 2015-06-18 18:00 (+71d) |  | 5.62d → 0d |  | was named Matriz de comunicación y justificación. |
| 14 | 1.12-Plan de proyecto. | 2015-04-09 09:00 → 2015-06-18 18:00 (+70d) | 2015-04-09 13:00 → 2015-06-19 12:00 (+71d) |  | 5.5d → 0d |  | was named Plan de proyecto |
| 17 | **Primera iteracion.** | 2015-04-09 15:00 → 2015-06-24 16:00 (+76d) | 2015-05-14 11:00 → 2015-07-29 11:00 (+76d) | 24.75d → 24.62d | 0.75d → 0d |  | was named Primera iteracion |
| 18 | **2-Análisis.** | 2015-04-09 15:00 → 2015-06-24 16:00 (+76d) | 2015-04-14 19:00 → 2015-06-29 18:00 (+76d) | 3.5d → 3.25d | 5.25d → 0d |  | was named Análisis |
| 19 | 2.1-Evaluar proveedores de req. a entrevistar | 2015-04-09 15:00 → 2015-06-24 16:00 (+76d) | 2015-04-09 19:00 → 2015-06-25 10:00 (+77d) |  | 5.5d → 0d |  | was named Evaluar proveedores de req. a entrevistar |
| 20 | 2.2-Definición de estrategia de recolección de req. | 2015-04-10 09:00 → 2015-06-25 10:00 (+76d) | 2015-04-10 13:00 → 2015-06-25 16:00 (+76d) |  | 5.5d → 0d |  | was named Definicion de estrategia de recoleccion de req. |
| 21 | 2.3-Planificar reuniones de elicitación de req. | 2015-04-10 15:00 → 2015-06-25 16:00 (+76d) | 2015-04-10 18:00 → 2015-06-25 19:00 (+76d) |  | 5.5d → 0d |  | was named Planificar reuniones de elicitación de req. |
| 22 | 2.4-Identificar procesos del sistema. | 2015-04-13 09:00 → 2015-06-26 09:00 (+74d) | 2015-04-13 12:00 → 2015-06-26 12:00 (+74d) |  | 5.38d → 0d |  | was named Identificar procesos del sistema. |
| 23 | 2.5-Identificar los req. funcionales. | 2015-04-13 12:00 → 2015-06-26 12:00 (+74d) | 2015-04-13 17:00 → 2015-06-26 17:00 (+74d) |  | 5.38d → 0d |  | was named Identificar los req. funcionales. |
| 24 | 2.6-Identificar los req. no funcionales. | 2015-04-13 17:00 → 2015-06-26 17:00 (+74d) | 2015-04-13 18:00 → 2015-06-26 18:00 (+74d) |  | 5.38d → 0d |  | was named Identificar los req. no funcionales. |
| 25 | 2.7-Especificación de req. Funcionales y no funcionales. | 2015-04-14 09:00 → 2015-06-26 18:00 (+73d) | 2015-04-14 13:00 → 2015-06-29 12:00 (+76d) |  | 5.25d → 0d |  | was named Especificación de req. Funcionales y no funcionales |
| 26 | 2.8-Gestión de req. Funcionales y no funcionales. | 2015-04-14 15:00 → 2015-06-29 12:00 (+76d) | 2015-04-14 19:00 → 2015-06-29 18:00 (+76d) |  | 5.25d → 0d |  | was named Gestión de req. Funcionales y no funcionales |
| 27 | **3-Diseño.** | 2015-04-15 09:00 → 2015-06-29 18:00 (+75d) | 2015-04-22 13:00 → 2015-07-06 17:00 (+75d) | 5.5d → 4.88d | 4.62d → 0d |  | was named Diseño |
| 28 | 3.1-Justificar el patrón de diseño a utilizar. | 2015-04-15 09:00 → 2015-06-29 18:00 (+75d) | 2015-04-15 11:00 → 2015-06-30 10:00 (+76d) |  | 5.25d → 0d |  | was named Justificar el patrón de diseño a utilizar. |
| 29 | 3.2-Estructura del Proyecto. | 2015-04-15 11:00 → 2015-06-30 10:00 (+76d) | 2015-04-15 13:00 → 2015-06-30 12:00 (+76d) |  | 5.25d → 0d |  | was named Estructura del Proyecto. |
| 30 | 3.3-Diagrama de actividades. | 2015-04-15 15:00 → 2015-06-30 12:00 (+76d) | 2015-04-15 17:00 → 2015-06-30 16:00 (+76d) |  | 5.25d → 0d |  | was named Diagrama de actividades. |
| 31 | 3.4-Diagramas de casos de uso. | 2015-04-16 09:00 → 2015-06-30 16:00 (+75d) | 2015-04-16 11:00 → 2015-06-30 18:00 (+75d) |  | 5d → 0d |  | was named Diagramas de casos de uso. |
| 32 | 3.5-Diagramas de secuencia. | 2015-04-16 11:00 → 2015-06-30 18:00 (+75d) | 2015-04-16 16:00 → 2015-07-01 11:00 (+76d) |  | 5d → 0d |  | was named Diagramas de secuencia. |
| 33 | 3.6-Diagra de clases. | 2015-04-17 09:00 → 2015-07-01 11:00 (+75d) | 2015-04-17 13:00 → 2015-07-01 17:00 (+75d) |  | 4.62d → 0d |  | was named Diagra de clases. |
| 34 | 3.7-Diagrama de rol. | 2015-04-17 15:00 → 2015-07-01 17:00 (+75d) | 2015-04-17 17:00 → 2015-07-01 19:00 (+75d) |  | 4.62d → 0d |  | was named Diagrama de rol. |
| 35 | 3.8-Diagrama de interación. | 2015-04-17 17:00 → 2015-07-02 09:00 (+76d) | 2015-04-17 19:00 → 2015-07-02 11:00 (+76d) |  | 4.62d → 0d |  | was named Diagrama de interación. |
| 36 | 3.9-Diagrama de componentes. | 2015-04-20 09:00 → 2015-07-02 11:00 (+73d) | 2015-04-20 11:00 → 2015-07-02 13:00 (+73d) |  | 4.62d → 0d |  | was named Diagrama de componentes. |
| 37 | 3.10-Diagrama despliegue. | 2015-04-20 11:00 → 2015-07-02 15:00 (+73d) | 2015-04-20 13:00 → 2015-07-02 17:00 (+73d) |  | 4.62d → 0d |  | was named Diagrama despliegue. |
| 38 | **3.11-Base de datos.** | 2015-04-20 15:00 → 2015-07-02 17:00 (+73d) | 2015-04-21 13:00 → 2015-07-03 17:00 (+73d) |  | 4.62d → 0d |  | was named Base de datos. |
| 39 | 3.11.1-Diagrama entidad relación. | 2015-04-20 15:00 → 2015-07-02 17:00 (+73d) | 2015-04-20 19:00 → 2015-07-03 11:00 (+74d) |  | 4.62d → 0d |  | was named Diagrama entidad relación. |
| 40 | 3.11.2-Diagrama relacional. | 2015-04-21 09:00 → 2015-07-03 11:00 (+73d) | 2015-04-21 13:00 → 2015-07-03 17:00 (+73d) |  | 4.62d → 0d |  | was named Diagrama relacional. |
| 41 | 3.12-Maquetación. | 2015-04-21 15:00 → 2015-07-03 17:00 (+73d) | 2015-04-21 19:00 → 2015-07-06 11:00 (+76d) |  | 4.62d → 0d |  | was named Maquetación. |
| 42 | 3.13-Mapa de navegación. | 2015-04-22 09:00 → 2015-07-06 11:00 (+75d) | 2015-04-22 13:00 → 2015-07-06 17:00 (+75d) |  | 4.62d → 0d |  | was named Mapa de naveción. |
| 43 | **4-Codificación.** | 2015-04-22 15:00 → 2015-07-06 17:00 (+75d) | 2015-05-12 13:00 → 2015-07-23 13:00 (+72d) | 14d → 12.75d | 1.25d → 0d |  | was named Codificación |
| 44 | 4.1-Creación de la DB. | 2015-04-22 15:00 → 2015-07-06 17:00 (+75d) | 2015-04-22 18:00 → 2015-07-07 10:00 (+76d) |  | 4.62d → 0d |  | was named Creación de la DB. |
| 45 | 4.2-Conexión a DB. | 2015-04-22 18:00 → 2015-07-07 10:00 (+76d) | 2015-04-23 10:00 → 2015-07-07 12:00 (+75d) |  | 4.62d → 0d |  | was named Conexión a DB. |
| 46 | **4.3-Módulo alumnos.** | 2015-04-24 09:00 → 2015-07-07 12:00 (+74d) | 2015-04-30 19:00 → 2015-07-13 12:00 (+74d) | 5d → 4d | 2.75d → 0d |  | was named Módulo alumnos |
| 47 | 4.3.1-Interfaz. | 2015-04-24 09:00 → 2015-07-07 12:00 (+74d) | 2015-04-27 19:00 → 2015-07-09 12:00 (+73d) |  | 3.75d → 0d |  | was named Interfaz. |
| 48 | 4.3.2-Alta de alumno. | 2015-04-28 09:00 → 2015-07-09 12:00 (+72d) | 2015-04-28 17:00 → 2015-07-10 10:00 (+73d) |  | 3.75d → 0d |  | was named Alta de alumno. |
| 49 | 4.3.3-Baja de alumno. | 2015-04-28 17:00 → 2015-07-10 10:00 (+73d) | 2015-04-28 19:00 → 2015-07-10 12:00 (+73d) |  | 3.75d → 0d |  | was named Baja de alumno. |
| 50 | 4.3.4-Actualización de alumno. | 2015-04-30 09:00 → 2015-07-10 12:00 (+71d) | 2015-04-30 16:00 → 2015-07-10 19:00 (+71d) |  | 2.75d → 0d |  | was named Actualización de alumno. |
| 51 | 4.3.5-Consultar alumnos. | 2015-04-30 16:00 → 2015-07-13 09:00 (+74d) | 2015-04-30 19:00 → 2015-07-13 12:00 (+74d) |  | 2.75d → 0d |  | was named Consultar alumnos. |
| 52 | **4.4-Módulo pagos** | 2015-05-01 09:00 → 2015-07-13 12:00 (+73d) | 2015-05-04 17:00 → 2015-07-15 10:00 (+72d) |  | 2.75d → 0d |  | was named Módulo pagos |
| 53 | 4.4.1-Interfaz. | 2015-05-01 09:00 → 2015-07-13 12:00 (+73d) | 2015-05-01 13:00 → 2015-07-13 18:00 (+73d) |  | 2.75d → 0d |  | was named Interfaz. |
| 54 | 4.4.2-Pago de colegiaturas. | 2015-05-01 15:00 → 2015-07-13 18:00 (+73d) | 2015-05-01 19:00 → 2015-07-14 12:00 (+74d) |  | 2.75d → 0d |  | was named Pago de colegiaturas. |
| 55 | 4.4.3-Editar pago. | 2015-05-04 09:00 → 2015-07-14 12:00 (+71d) | 2015-05-04 12:00 → 2015-07-14 17:00 (+71d) |  | 2.75d → 0d |  | was named Editar pago. |
| 56 | 4.4.4-Eliminar pago. | 2015-05-04 12:00 → 2015-07-14 17:00 (+71d) | 2015-05-04 13:00 → 2015-07-14 18:00 (+71d) |  | 2.75d → 0d |  | was named Eliminar pago. |
| 57 | 4.4.5-Consultar pago. | 2015-05-04 15:00 → 2015-07-14 18:00 (+71d) | 2015-05-04 17:00 → 2015-07-15 10:00 (+72d) |  | 2.75d → 0d |  | was named Consultar pago. |
| 58 | **4.5-Módulo becas** | 2015-05-04 17:00 → 2015-07-15 10:00 (+72d) | 2015-05-07 13:00 → 2015-07-17 16:00 (+71d) | 2.75d → 2.5d | 2.5d → 0d |  | was named Módulo becas |
| 59 | 4.5.1-Interfaz. | 2015-05-04 17:00 → 2015-07-15 10:00 (+72d) | 2015-05-05 19:00 → 2015-07-16 12:00 (+72d) |  | 2.75d → 0d |  | was named Interfaz. |
| 60 | 4.5.2-Asignar beca. | 2015-05-06 09:00 → 2015-07-16 12:00 (+71d) | 2015-05-06 12:00 → 2015-07-16 17:00 (+71d) |  | 2.75d → 0d |  | was named Asignar beca. |
| 61 | 4.5.3-Editar beca. | 2015-05-06 12:00 → 2015-07-16 17:00 (+71d) | 2015-05-06 17:00 → 2015-07-17 10:00 (+72d) |  | 2.75d → 0d |  | was named Editar beca. |
| 62 | 4.5.4-Eliminar beca. | 2015-05-07 09:00 → 2015-07-17 10:00 (+71d) | 2015-05-07 11:00 → 2015-07-17 12:00 (+71d) |  | 2.5d → 0d |  | was named Eliminar beca. |
| 63 | 4.5.5-Consultar beca. | 2015-05-07 11:00 → 2015-07-17 12:00 (+71d) | 2015-05-07 13:00 → 2015-07-17 16:00 (+71d) |  | 2.5d → 0d |  | was named Consultar beca. |
| 64 | **4.6-Módulo reportes.** | 2015-05-07 15:00 → 2015-07-17 16:00 (+71d) | 2015-05-08 19:00 → 2015-07-20 16:00 (+73d) | 1.5d → 1d | 2d → 0d |  | was named Módulo Reportes |
| 65 | 4.6.1-Interfaz. | 2015-05-07 15:00 → 2015-07-17 16:00 (+71d) | 2015-05-08 13:00 → 2015-07-20 16:00 (+73d) |  | 2.5d → 0d |  | was named Interfaz. |
| 66 | 4.6.2-Consultar pagos. | 2015-05-08 09:00 → 2015-07-17 16:00 (+70d) | 2015-05-08 11:00 → 2015-07-17 18:00 (+70d) |  | 2d → 0d |  | was named Consultar pagos. |
| 67 | 4.6.3-Consultar alumnos. | 2015-05-08 11:00 → 2015-07-17 18:00 (+70d) | 2015-05-08 13:00 → 2015-07-20 10:00 (+73d) |  | 2d → 0d |  | was named Consultar alumnos. |
| 68 | 4.6.4-Colsultar becas. | 2015-05-08 15:00 → 2015-07-20 10:00 (+73d) | 2015-05-08 17:00 → 2015-07-20 12:00 (+73d) |  | 2d → 0d |  | was named Colsultar becas. |
| 69 | 4.6.5-Consultar ciclos. | 2015-05-08 17:00 → 2015-07-20 12:00 (+73d) | 2015-05-08 19:00 → 2015-07-20 16:00 (+73d) |  | 2d → 0d |  | was named Consultar ciclos. |
| 70 | **4.7-Módulo Ciclos** | 2015-05-11 09:00 → 2015-07-20 16:00 (+70d) | 2015-05-12 13:00 → 2015-07-21 18:00 (+70d) | 1.5d → 1.25d | 1.25d → 0d |  | was named Módulo Ciclos |
| 71 | 4.7.1-Interfaz. | 2015-05-11 09:00 → 2015-07-20 16:00 (+70d) | 2015-05-11 17:00 → 2015-07-21 12:00 (+71d) |  | 2d → 0d |  | was named Interfaz. |
| 72 | 4.7.2-Asignar ciclo. | 2015-05-12 09:00 → 2015-07-21 12:00 (+70d) | 2015-05-12 11:00 → 2015-07-21 16:00 (+70d) |  | 1.25d → 0d | none → 71 | was named Asignar ciclo. |

| ID | Task | Start | Finish | Duration | Total float | Predecessors | Other |
| --- | --- | --- | --- | --- | --- | --- | --- |
| 73 | 4.7.3-Editar ciclo. | 2015-05-12 11:00 → 2015-07-21 16:00 (+70d) | 2015-05-12 13:00 → 2015-07-21 18:00 (+70d) |  | 1.25d → 1.62d |  | was named Editar ciclo. |
| 74 | 4.7.4-Eliminar ciclo. | 2015-05-12 11:00 → 2015-07-21 16:00 (+70d) | 2015-05-12 13:00 → 2015-07-21 18:00 (+70d) |  | 1.25d → 1.62d |  | was named Eliminar ciclo. |
| 75 | 4.7.5-Consultar ciclo. | 2015-05-12 11:00 → 2015-07-21 16:00 (+70d) | 2015-05-12 13:00 → 2015-07-21 18:00 (+70d) |  | 1.25d → 0d |  | was named Consultar ciclo. |
| 77 | **5-Pruebas.** | 2015-05-12 15:00 → 2015-07-23 15:00 (+72d) | 2015-05-13 13:00 → 2015-07-27 12:00 (+75d) | 1d → 1.88d | 1.25d → 0d |  | was named Pruebas |
| 78 | 5.1-Pruebas unitarias. | 2015-05-12 15:00 → 2015-07-23 15:00 (+72d) | 2015-05-12 19:00 → 2015-07-23 19:00 (+72d) |  | 1.75d → 0d |  | was named Pruebas unitarias. |
| 79 | 5.2-Pruebas de integración. | 2015-05-12 15:00 → 2015-07-24 09:00 (+73d) | 2015-05-12 19:00 → 2015-07-24 12:00 (+73d) | 4h → 3h | 1.25d → 0d | 75 → 78 | was named Pruebas de integración. |
| 80 | 5.3-Pruebas de rendimiento. | 2015-05-13 09:00 → 2015-07-24 12:00 (+72d) | 2015-05-13 13:00 → 2015-07-24 18:00 (+72d) |  | 1.25d → 0d |  | was named Pruebas de rendimiento.; constraint none → start no earlier than 2015-05-15 09:00 |
| 81 | 5.4-Pruebas del sistema. | 2015-05-13 09:00 → 2015-07-24 18:00 (+72d) | 2015-05-13 13:00 → 2015-07-27 12:00 (+75d) |  | 1.25d → 0d | 79 → 80 | was named Pruebas del sistema.; constraint none → start no earlier than 2015-05-15 09:00 |
| 82 | 6-Entrega versión base. | 2015-05-14 09:00 → 2015-07-27 12:00 (+74d) | 2015-05-14 11:00 → 2015-07-27 16:00 (+74d) |  | 0.75d → 0d |  | was named Entrega Versión base |
| 84 | **Segunda iteracion.** | 2015-05-14 11:00 → 2015-07-29 11:00 (+76d) | 2015-06-03 19:00 → 2015-08-19 17:00 (+77d) | 14.75d → 15.5d | 0.62d → 0d |  | was named Segunda iteracion |
| 85 | **1-Análisis versión 0.1** | 2015-05-14 11:00 → 2015-07-29 11:00 (+76d) | 2015-05-15 13:00 → 2015-07-30 12:00 (+76d) | 1.25d → 1.12d | 0.62d → 0d |  | was named Análisis versión 0.1 |
| 86 | 1.1-Identificar procesos del sistema. | 2015-05-14 11:00 → 2015-07-29 11:00 (+76d) | 2015-05-14 16:00 → 2015-07-29 16:00 (+76d) |  | 0.75d → 0d |  | was named Identificar procesos del sistema. |
| 87 | 1.2-Minuta de reunión. | 2015-05-14 16:00 → 2015-07-29 16:00 (+76d) | 2015-05-14 18:00 → 2015-07-29 18:00 (+76d) |  | 0.75d → 0d |  | was named Minuta de reunión. |
| 88 | 1.3-Identificar los req. funcionales. | 2015-05-15 09:00 → 2015-07-29 18:00 (+75d) | 2015-05-15 11:00 → 2015-07-30 10:00 (+76d) |  | 0.62d → 0d |  | was named Identificar los req. funcionales. |
| 89 | 1.4-Identificar los req. no funcionales. | 2015-05-15 11:00 → 2015-07-30 10:00 (+76d) | 2015-05-15 13:00 → 2015-07-30 12:00 (+76d) |  | 0.62d → 0d |  | was named Identificar los req. no funcionales. |
| 90 | **2-Diseño versión 0.1** | 2015-05-15 15:00 → 2015-07-30 12:00 (+76d) | 2015-05-18 16:00 → 2015-07-31 13:00 (+74d) |  | 0.62d → 0d |  | was named Diseño versión 0.1 |
| 91 | 2.1-Diagrama de rol. | 2015-05-15 15:00 → 2015-07-30 12:00 (+76d) | 2015-05-15 17:00 → 2015-07-30 16:00 (+76d) |  | 0.62d → 0d |  | was named Diagrama de rol. |
| 92 | 2.2-Diagrama de interación. | 2015-05-15 17:00 → 2015-07-30 16:00 (+76d) | 2015-05-15 19:00 → 2015-07-30 18:00 (+76d) |  | 0.62d → 0d |  | was named Diagrama de interación. |
| 93 | 2.3-Diagrama de componentes. | 2015-05-18 09:00 → 2015-07-30 18:00 (+73d) | 2015-05-18 11:00 → 2015-07-31 10:00 (+74d) |  | 0.62d → 0d |  | was named Diagrama de componentes. |
| 94 | 2.4-Diagrama despliegue. | 2015-05-18 11:00 → 2015-07-31 10:00 (+74d) | 2015-05-18 12:00 → 2015-07-31 11:00 (+74d) |  | 0.62d → 0d |  | was named Diagrama despliegue. |
| 95 | 2.5-Maquetación. | 2015-05-18 12:00 → 2015-07-31 11:00 (+74d) | 2015-05-18 13:00 → 2015-07-31 12:00 (+74d) |  | 0.62d → 0d |  | was named Maquetación. |
| 96 | 2.6-Mapa de naveción. | 2015-05-18 15:00 → 2015-07-31 12:00 (+74d) | 2015-05-18 16:00 → 2015-07-31 13:00 (+74d) |  | 0.62d → 0d |  | was named Mapa de naveción. |
| 97 | **3-Codificación versión 0.1** | 2015-05-18 16:00 → 2015-07-31 15:00 (+74d) | 2015-06-01 16:00 → 2015-08-14 13:00 (+74d) |  | 0.62d → 0d |  | was named Codificación versión 0.1 |
| 98 | 3.1-Módulo alumnos versión0.1. | 2015-05-18 16:00 → 2015-07-31 15:00 (+74d) | 2015-05-20 16:00 → 2015-08-04 13:00 (+76d) |  | 0.62d → 0d |  | was named Módulo alumnos versión0.1. |
| 99 | 3.2-Módulo pagos versión0.1. | 2015-05-20 16:00 → 2015-08-04 15:00 (+76d) | 2015-05-22 16:00 → 2015-08-06 13:00 (+76d) |  | 0.62d → 0d |  | was named Módulo pagos versión0.1. |
| 100 | 3.3-Módulo becas versión0.1. | 2015-05-22 16:00 → 2015-08-06 15:00 (+76d) | 2015-05-26 16:00 → 2015-08-10 13:00 (+76d) |  | 0.62d → 0d |  | was named Módulo becas versión0.1. |
| 101 | 3.4-Módulo reportes versión0.1. | 2015-05-26 16:00 → 2015-08-10 15:00 (+76d) | 2015-05-28 16:00 → 2015-08-12 13:00 (+76d) |  | 0.62d → 0d |  | was named Módulo reportes versión0.1. |
| 102 | 3.5-Módulo ciclos versión0.1. | 2015-05-28 16:00 → 2015-08-12 15:00 (+76d) | 2015-06-01 16:00 → 2015-08-14 13:00 (+74d) |  | 0.62d → 0d |  | was named Módulo ciclos versión0.1. |
| 103 | **4-Pruebas versión 0.1** | 2015-06-01 16:00 → 2015-08-14 15:00 (+74d) | 2015-06-03 16:00 → 2015-08-18 13:00 (+76d) |  | 0.62d → 0d |  | was named Pruebas versión 0.1 |
| 104 | 4.1-Pruebas unitarias versión0.1. | 2015-06-01 16:00 → 2015-08-14 15:00 (+74d) | 2015-06-02 10:00 → 2015-08-14 19:00 (+73d) |  | 0.62d → 0d |  | was named Pruebas unitarias versión0.1. |
| 105 | 4.2-Pruebas de integración versión0.1. | 2015-06-02 10:00 → 2015-08-17 09:00 (+76d) | 2015-06-02 16:00 → 2015-08-17 13:00 (+76d) |  | 0.62d → 0d |  | was named Pruebas de integración versión0.1. |
| 106 | 4.3-Pruebas de rendimiento versión0.1. | 2015-06-02 16:00 → 2015-08-17 15:00 (+76d) | 2015-06-03 10:00 → 2015-08-17 19:00 (+75d) |  | 0.62d → 0d |  | was named Pruebas de rendimiento versión0.1. |
| 107 | 4.4-Pruebas del sistema versión0.1. | 2015-06-03 10:00 → 2015-08-18 09:00 (+76d) | 2015-06-03 16:00 → 2015-08-18 13:00 (+76d) |  | 0.62d → 0d |  | was named Pruebas del sistema versión0.1. |
| 108 | 5-Entrega versión 0.1 | 2015-06-03 16:00 → 2015-08-18 15:00 (+76d) | 2015-06-03 19:00 → 2015-08-18 18:00 (+76d) |  | 0.62d → 0d |  | was named Entrega versión 0.1 |
| 110 | **Tercera interacion** | 2015-06-04 09:00 → 2015-08-19 17:00 (+76d) | 2015-06-16 17:00 → 2015-09-01 18:00 (+77d) | 8.75d → 9.12d | 0.62d → 0d |  |  |
| 111 | **1-Análisis versió 0.2** | 2015-06-04 09:00 → 2015-08-19 17:00 (+76d) | 2015-06-04 10:00 → 2015-08-19 18:00 (+76d) |  | 0.62d → 0d |  | was named Análisis versió 0.2 |
| 112 | 1.1-Minuta de reunión versión0.2. | 2015-06-04 09:00 → 2015-08-19 17:00 (+76d) | 2015-06-04 10:00 → 2015-08-19 18:00 (+76d) |  | 0.62d → 0d |  | was named Minuta de reunión versión0.2. |
| 113 | **2-Diseño version 0.2** | 2015-06-04 10:00 → 2015-08-19 18:00 (+76d) | 2015-06-04 13:00 → 2015-08-20 16:00 (+77d) | 0.38d → 0.75d | 0.62d → 0d |  | was named Diseño version 0.2 |
| 114 | 2.1-Maquetación versión0.2. | 2015-06-04 10:00 → 2015-08-19 18:00 (+76d) | 2015-06-04 13:00 → 2015-08-20 11:00 (+77d) |  | 0.62d → 0d |  | was named Maquetación versión0.2. |
| 115 | 2.2-Mapa de naveción versión0.2. | 2015-06-04 10:00 → 2015-08-20 11:00 (+77d) | 2015-06-04 13:00 → 2015-08-20 16:00 (+77d) |  | 0.62d → 0d | 112 → 114 | was named Mapa de naveción versión0.2. |
| 116 | **3-Codificación versión0.2** | 2015-06-04 15:00 → 2015-08-20 16:00 (+77d) | 2015-06-12 17:00 → 2015-08-28 18:00 (+77d) |  | 0.62d → 0d |  | was named Codificación versión0.2 |
| 117 | 3.1-Módulo alumnos versión0.2. | 2015-06-04 15:00 → 2015-08-20 16:00 (+77d) | 2015-06-05 17:00 → 2015-08-21 18:00 (+77d) |  | 0.62d → 0d |  | was named Módulo alumnos versión0.2. |
| 118 | 3.2-Módulo pagos versión0.2. | 2015-06-05 17:00 → 2015-08-21 18:00 (+77d) | 2015-06-08 19:00 → 2015-08-25 10:00 (+78d) |  | 0.62d → 0d |  | was named Módulo pagos versión0.2. |
| 119 | 3.3-Módulo becas versión0.2. | 2015-06-09 09:00 → 2015-08-25 10:00 (+77d) | 2015-06-10 11:00 → 2015-08-26 12:00 (+77d) |  | 0.62d → 0d |  | was named Módulo becas versión0.2. |
| 120 | 3.4-Módulo reportes versión0.2. | 2015-06-10 11:00 → 2015-08-26 12:00 (+77d) | 2015-06-11 13:00 → 2015-08-27 16:00 (+77d) |  | 0.62d → 0d |  | was named Módulo reportes versión0.2. |
| 121 | 3.5-Módulo ciclos versión0.2. | 2015-06-11 15:00 → 2015-08-27 16:00 (+77d) | 2015-06-12 17:00 → 2015-08-28 18:00 (+77d) |  | 0.62d → 0d |  | was named Módulo ciclos versión0.2. |
| 122 | **4-Pruebas versión 0.2** | 2015-06-12 17:00 → 2015-08-28 18:00 (+77d) | 2015-06-16 17:00 → 2015-09-01 18:00 (+77d) |  | 0.62d → 0d |  | was named Pruebas versión 0.2 |
| 123 | 4.1-Pruebas de rendimiento versión0.2. | 2015-06-12 17:00 → 2015-08-28 18:00 (+77d) | 2015-06-15 17:00 → 2015-08-31 18:00 (+77d) |  | 0.62d → 0d |  | was named Pruebas de rendimiento versión0.2. |
| 124 | 4.2-Pruebas del sistema 0.2. | 2015-06-15 17:00 → 2015-08-31 18:00 (+77d) | 2015-06-16 17:00 → 2015-09-01 18:00 (+77d) |  | 0.62d → 0d |  | was named Pruebas del sistema 0.2. |
| 125 | **5-Implementación.** | 2015-06-16 17:00 → 2015-09-01 18:00 (+77d) | 2015-06-17 13:00 → 2015-09-02 16:00 (+77d) |  | 0.62d → 0d |  | was named Implementación |
| 126 | 5.1-Elección del hosting. | 2015-06-16 17:00 → 2015-09-01 18:00 (+77d) | 2015-06-17 10:00 → 2015-09-02 11:00 (+77d) |  | 0.62d → 0d |  | was named Elección del Hosting. |
| 127 | 5.2-Copiar los archivos fuente. | 2015-06-17 10:00 → 2015-09-02 11:00 (+77d) | 2015-06-17 13:00 → 2015-09-02 16:00 (+77d) |  | 0.62d → 0d |  | was named Copiar los archivos fuente. |
| 128 | **6-Cierre del Proyecto.** | 2015-06-17 15:00 → 2015-09-02 16:00 (+77d) | 2015-06-18 19:00 → 2015-09-04 10:00 (+78d) |  | 0.62d → 0d |  | was named Cierre del Proyecto. |
| 129 | 6.1-Carta de aceptación. | 2015-06-17 15:00 → 2015-09-02 16:00 (+77d) | 2015-06-17 16:00 → 2015-09-02 17:00 (+77d) |  | 0.62d → 0d |  | was named Carta de Aceptación. |
| 130 | 6.2-Acta de cierrede proyectos. | 2015-06-17 16:00 → 2015-09-02 17:00 (+77d) | 2015-06-17 17:00 → 2015-09-02 18:00 (+77d) |  | 0.62d → 0d |  | was named Acta de cierrede proyectos. |
| 131 | 6.3-Evaluación de desempeño. | 2015-06-17 17:00 → 2015-09-02 18:00 (+77d) | 2015-06-18 10:00 → 2015-09-03 11:00 (+77d) |  | 0.62d → 0d |  | was named Evaluación de desempeño. |
| 132 | 6.4-Liberación de recursos. | 2015-06-18 10:00 → 2015-09-03 11:00 (+77d) | 2015-06-18 12:00 → 2015-09-03 13:00 (+77d) |  | 0.62d → 0d |  | was named Liberación de recursos. |
| 133 | 6.5-Lecciones aprendidas. | 2015-06-18 12:00 → 2015-09-03 15:00 (+77d) | 2015-06-18 17:00 → 2015-09-03 18:00 (+77d) |  | 0.62d → 0d |  | was named Lecciones aprendidas. |
| 134 | 6.6-Informe final(cierre). | 2015-06-18 17:00 → 2015-09-03 18:00 (+77d) | 2015-06-18 19:00 → 2015-09-04 10:00 (+78d) |  | 0.62d → 0d |  | was named Informe final(cierre). |
| 135 | 7-Entrega final. | 2015-06-19 09:00 → 2015-09-04 10:00 (+77d) | 2015-06-19 12:00 → 2015-09-04 13:00 (+77d) |  | 0.62d → 0d |  | was named Entrega final versión 0.2 |
